Schedule from MS Project, 2016-07-01 to 2018-01-17, A marks actual dates.

## Calendars

- 标准: Mon-Fri 08:00-12:00, 13:00-17:00; Sat-Sun off. Exceptions (off unless hours are given): 2017-02-26 08:00-12:00, 13:00-17:00.

## Resources

| Resource | Group |
| --- | --- |
| 魏大高 | 红领巾 |
| 韩耀强 |  |
| 夏迎杰 |  |
| 胡奎 |  |
| 顾俊俊 |  |
| 杨传波 |  |
| 徐斌 |  |
| 杨澄 |  |
| 张超（外部） |  |
| 夏煜 |  |
| 黄笑龙（外） |  |
| 夏煜 |  |
| 刘佳丽 |  |
| 邵磊（） |  |
| 邵磊（外） |  |
| 李子花（外） |  |
| 丁翠（外） |  |
| 施燕（外） |  |
| 张超 |  |
| 程伟(IPTV) |  |
| 邹崚 |  |
| 袁正印 |  |
| 张秋月 |  |
| 黄笑龙 |  |
| 陈爽（外） |  |
| 龚小琴 |  |
| 施燕 |  |
| PS |  |
| 丁翠（外）李子花 |  |
| 顾俊俊 李晨佳 |  |
| 杨传波 张秋月 |  |
| 熊杰（外） |  |
| 赖明江 |  |
| 李晨嘉 |  |
| 陈爽 |  |

## Schedule

| ID | WBS | Task | Duration | Start | Finish | Complete | Remaining | Total slack | Constraint | Resources | Work | Actual work |
| --- | --- | --- | --- | --- | --- | --- | --- | --- | --- | --- | --- | --- |
| 1 | 1 | **陕西移动** | 104d? | 2016-07-05 A | 2016-11-25 A | 100% |  |  |  |  | 2432h | 2432h |
| 2 | 1.1 | 终端开发 | 8.5d? | 2016-07-15 A | 2016-07-27 A | 100% |  |  | finish no earlier than 2016-07-27 | 杨澄; 徐斌 | 136h | 136h |
| 3 | 1.2 | 平台定制开发 | 17d? | 2016-07-05 A | 2016-07-27 A | 100% |  |  | finish no earlier than 2016-07-27 | 魏大高; 夏迎杰; 韩耀强 | 408h | 408h |
| 4 | 1.3 | 注入模块开发完成 | 29d? | 2016-07-05 A | 2016-08-12 A | 100% |  |  | start no earlier than 2016-07-05 | 魏大高; 韩耀强 | 464h | 464h |
| 5 | 1.4 | 测试环境对接 | 9.2d? | 2016-08-16 A | 2016-08-29 A | 100% |  |  | finish no earlier than 2016-08-29 | 魏大高; 韩耀强; 杨传波; 徐斌; 杨澄 | 368h | 368h |
| 6 | 1.5 | 现网环境对接 | 51d? | 2016-08-29 A | 2016-11-07 A | 100% |  |  | start no earlier than 2016-08-29 | 杨传波; 顾俊俊 | 816h | 816h |
| 7 | 1.6 | **第三方集成测试** | 7d? | 2016-11-17 A | 2016-11-25 A | 100% |  |  |  |  | 240h | 240h |
| 8 | 1.6.1 | 直播/回看 注入 | 4d? | 2016-11-17 A | 2016-11-22 A | 100% |  |  | finish no earlier than 2016-11-22 | 顾俊俊; 杨传波 | 64h | 64h |
| 9 | 1.6.2 | 直播/回看 鉴权 | 2d? | 2016-11-17 A | 2016-11-18 A | 100% |  |  | start no earlier than 2016-11-17 | 顾俊俊; 杨传波 | 32h | 32h |
| 10 | 1.6.3 | 点播注入&鉴权 | 2d? | 2016-11-17 A | 2016-11-18 A | 100% |  |  | start no earlier than 2016-11-17 | 杨传波; 顾俊俊 | 32h | 32h |
| 11 | 1.6.4 | 终端适配播测 | 7d? | 2016-11-17 A | 2016-11-25 A | 100% |  |  | start no earlier than 2016-11-17 | 顾俊俊; 夏煜 | 112h | 112h |
| 12 | 2 | **安徽移动统一Launcher** | 86d? | 2016-09-19 A | 2017-01-16 | 99% | 0.46d? | 263d |  |  | 496h | 493.6h |
| 13 | 2.1 | 平台开发 | 7d? | 2016-09-19 A | 2016-09-27 A | 100% |  |  | finish no earlier than 2016-09-27 | 胡奎; 黄笑龙（外） | 112h | 112h |
| 14 | 2.2 | 终端开发 | 5d? | 2016-09-19 A | 2016-09-23 A | 100% |  |  | finish no earlier than 2016-09-23 | 张超（外部） | 40h | 40h |
| 15 | 2.3 | 平台测试 | 9d? | 2016-09-28 A | 2016-10-10 A | 100% |  |  | finish no earlier than 2016-10-10 | 杨传波; 夏煜 | 144h | 144h |
| 16 | 2.4 | 终端测试 | 4d? | 2016-10-11 A | 2016-10-14 A | 100% |  |  | finish no earlier than 2016-10-14 | 杨传波; 夏煜 | 64h | 64h |
| 17 | 2.5 | 遗留问题产品的3.1风格兼容问题 | 11d? | 2016-12-12 A | 2016-12-26 A | 100% |  |  | start no earlier than 2016-12-12 |  |  |  |
| 18 | 2.6 | WAG兼容终端2.6版本风格 | 3d? | 2016-12-26 A | 2016-12-28 A | 100% |  |  | finish no earlier than 2016-12-28 |  |  |  |
| 19 | 2.7 | 节目单导出 | 2d? | 2016-12-23 A | 2016-12-26 A | 100% |  |  | finish no earlier than 2016-12-26 | 黄笑龙（外） | 16h | 16h |
| 20 | 2.8 | 直播语音控制 | 4d? | 2016-12-23 A | 2016-12-28 A | 100% |  |  | finish no earlier than 2016-12-28 | 张超 | 32h | 32h |
| 21 | 2.9 | 回看语音控制 | 5d? | 2016-12-29 A | 2017-01-04 A | 100% |  |  | start no earlier than 2016-12-29 | 张超 | 40h | 40h |
| 22 | 2.10 | 语言控制测试 | 6d? | 2017-01-09 A | 2017-01-16 | 95% | 0.3d? | 115d | finish no earlier than 2017-01-16 | 杨传波 | 48h | 45.6h |
| 23 | 3 | **河北连通4K（H264,h265）码流存在交集问题修复** | 16d? | 2016-10-18 A | 2016-11-08 A | 100% |  |  |  |  | 72h | 72h |
| 24 | 3.1 | PS模块开发 | 5d? | 2016-10-18 A | 2016-10-24 A | 100% |  |  | finish no earlier than 2016-10-24 | 胡奎 | 40h | 40h |
| 25 | 3.2 | 测试 | 4d? | 2016-11-03 A | 2016-11-08 A | 100% |  |  | start no earlier than 2016-11-03 | 顾俊俊 | 32h | 32h |

| ID | WBS | Task | Duration | Start | Finish | Complete | Remaining | Total slack | Constraint | Resources | Work | Actual work |
| --- | --- | --- | --- | --- | --- | --- | --- | --- | --- | --- | --- | --- |
| 26 | 4 | **贵州电信扫码支付** | 56d? | 2016-09-19 A | 2016-12-05 A | 100% |  |  |  |  | 872h | 872h |
| 27 | 4.1 | 平台研发 | 15d? | 2016-09-19 A | 2016-10-07 A | 100% |  |  | start no earlier than 2016-09-19 | 邵磊（外）; 韩耀强 | 240h | 240h |
| 28 | 4.2 | 测试 | 18d? | 2016-10-10 A | 2016-11-02 A | 100% |  |  | finish no earlier than 2016-11-02 | 李子花（外）; 丁翠（外）; 施燕（外） | 432h | 432h |
| 29 | 4.3 | 部署上线 | 1d? | 2016-11-04 A | 2016-11-04 A | 100% |  |  | start no earlier than 2016-11-04 |  |  |  |
| 30 | 4.4 | **新增需求** | 7d? | 2016-11-02 A | 2016-11-10 A | 100% |  |  |  |  | 80h | 80h |
| 31 | 4.4.1 | 产品有效期显示问题修改 | 4d? | 2016-11-02 A | 2016-11-07 A | 100% |  |  | finish no earlier than 2016-11-07 | 邵磊（外） | 32h | 32h |
| 32 | 4.4.2 | 新增账单支付提醒 | 6d? | 2016-11-03 A | 2016-11-10 A | 100% |  |  | finish no earlier than 2016-11-10 | 邵磊（外） | 48h | 48h |
| 33 | 4.5 | **需求变更** | 6d? | 2016-11-28 A | 2016-12-05 A | 100% |  |  |  |  | 120h | 120h |
| 34 | 4.5.1 | 屏蔽翼支付入库 | 2d? | 2016-11-30 A | 2016-12-01 A | 100% |  |  | finish no earlier than 2016-12-01 | 邵磊（外） | 16h | 16h |
| 35 | 4.5.2 | 扫码支付中增加翼支付方式 | 3d? | 2016-11-28 A | 2016-11-30 A | 100% |  |  | finish no earlier than 2016-12-01 | 邵磊（外） | 24h | 24h |
| 36 | 4.5.3 | 新增需求测试 | 5d? | 2016-11-29 A | 2016-12-05 A | 100% |  |  | start no earlier than 2016-11-29 | 李子花（外）; 丁翠（外） | 80h | 80h |
| 37 | 5 | **山东移动魔百合** | 33d? | 2016-10-27 A | 2016-12-12 A | 100% |  |  |  |  | 552h | 552h |
| 38 | 5.1 | 终端研发 | 5d? | 2016-10-27 A | 2016-11-02 A | 100% |  |  | finish no earlier than 2016-11-02 | 杨澄 | 40h | 40h |
| 39 | 5.2 | 平台研发 | 5d? | 2016-10-27 A | 2016-11-02 A | 100% |  |  | start no earlier than 2016-10-27 | 夏迎杰; 魏大高 | 80h | 80h |
| 40 | 5.3 | 落地平台数据库及模块等部署 | 5d? | 2016-11-03 A | 2016-11-09 A | 100% |  |  | start no earlier than 2016-11-03 |  |  |  |
| 41 | 5.4 | 集成测试 | 15d? | 2016-11-10 A | 2016-11-30 A | 100% |  |  | start no earlier than 2016-11-10 | 顾俊俊; 杨传波; 夏煜 | 360h | 360h |
| 42 | 5.5 | 修改开户流程逻辑 | 5d? | 2016-11-30 A | 2016-12-06 A | 100% |  |  | start no earlier than 2016-11-30 | 夏迎杰 | 40h | 40h |
| 43 | 5.6 | 开户流程调整测试 | 4d? | 2016-12-07 A | 2016-12-12 A | 100% |  |  | finish no earlier than 2016-12-12 | 顾俊俊 | 32h | 32h |
| 44 | 6 | **福建电信** | 37d? | 2016-11-10 A | 2016-12-30 | 91% | 3.36d? | 274d |  |  | 376h | 376h |
| 45 | 6.1 | 平台升级模块版本准备 | 2d? | 2016-11-10 A | 2016-11-11 A | 100% |  |  | finish no earlier than 2016-11-11 | 胡奎 | 16h | 16h |
| 46 | 6.2 | 平台升级数据库脚本准备 | 4d? | 2016-11-14 A | 2016-11-17 A | 100% |  |  | start no earlier than 2006-11-13 | 胡奎 | 32h | 32h |
| 47 | 6.3 | 平台整体升级方案整理 | 3d? | 2016-11-16 A | 2016-11-18 A | 100% |  |  | finish no earlier than 2006-10-18 | 胡奎 | 24h | 24h |
| 48 | 6.4 | 终端3.1版本适配研发 | 8d? | 2016-11-10 A | 2016-11-21 A | 100% |  |  | finish no earlier than 2016-11-21 | 张超（外部） | 64h | 64h |
| 49 | 6.5 | 平台测试 | 10d? | 2016-11-21 A | 2016-12-02 A | 100% |  |  | start no earlier than 2016-11-21 | 顾俊俊; 杨传波; 夏煜 | 240h | 240h |
| 50 | 6.6 | 平台现网升级 | 8d? | 2016-12-07 A | 2016-12-16 A | 100% |  |  | finish no earlier than 2016-12-16 |  |  |  |
| 51 | 6.7 | 终端测试 | 5d? | 2016-12-19 A | 2016-12-23 A | 100% |  |  | start no earlier than 2016-12-19 |  |  |  |
| 52 | 6.8 | 终端现网版本升级 | 4d? | 2016-12-27 | 2016-12-30 |  |  | 126d | finish no earlier than 2016-12-30 |  |  |  |

| ID | WBS | Task | Type | Duration | Start | Finish | Predecessors | Complete | Remaining | Total slack | Constraint | Resources | Work | Actual work |
| --- | --- | --- | --- | --- | --- | --- | --- | --- | --- | --- | --- | --- | --- | --- |
| 53 | 7 | **移动基地智能语音搜索** |  | 15d | 2016-12-01 A | 2016-12-21 |  | 99% | 0.21d |  |  |  | 200h | 197.2h |
| 54 | 7.1 | 搜索直播节目单导出 |  | 2d? | 2016-12-01 A | 2016-12-02 A |  | 100% |  |  | finish no earlier than 2016-12-02 | 黄笑龙（外） | 16h | 16h |
| 55 | 7.2 | 终端版本搜索相关功能开发 |  | 7d? | 2016-12-01 A | 2016-12-09 A |  | 100% |  |  | finish no earlier than 2016-12-09 | 徐斌 | 56h | 56h |
| 56 | 7.3 | 平台研发对接测试 |  | 5d? | 2016-12-05 A | 2016-12-09 A |  | 100% |  |  | finish no earlier than 2016-12-09 | 黄笑龙（外） | 40h | 40h |
| 57 | 7.4 | 终端研发对接测试 |  | 4d? | 2016-12-06 A | 2016-12-09 A |  | 100% |  |  | finish no earlier than 2016-12-09 | 徐斌 | 32h | 32h |
| 58 | 7.5 | 测试集成测试 |  | 7d? | 2016-12-12 A | 2016-12-20 |  | 95% | 0.35d? | 2954d | finish no earlier than 2016-12-20 | 杨传波 | 56h | 53.2h |
| 59 | 8 | **辽宁移动** |  | 77d? | 2016-12-05 A | 2017-03-20 |  | 80% | 15.4d? | 217d |  |  | 328h | 152h |
| 60 | 8.1 | 测试环境准备 |  | 4d? | 2016-12-05 A | 2016-12-08 A |  | 100% |  |  | start no earlier than 2016-12-05 | 魏大高 | 32h | 32h |
| 61 | 8.2 | 测试环境进行对接 |  | 11d? | 2016-12-06 A | 2016-12-20 A |  | 100% |  |  | finish no earlier than 2016-12-20 | 魏大高 | 88h | 88h |
| 62 | 8.3 | 正式环境部署 |  | 15d? | 2017-02-06 A | 2017-02-24 A |  | 100% |  |  | finish no earlier than 2017-02-24 |  |  |  |
| 63 | 8.4 | 正式环境内容注入 |  | 4d? | 2017-03-07 A | 2017-03-10 |  | 50% | 2d? | 75d | start no earlier than 2017-03-07 | 杨传波; 魏大高 | 64h | 32h |
| 64 | 8.5 | 正式环境集成测试 |  | 6d? | 2017-03-13 | 2017-03-20 |  |  |  | 69d | finish no earlier than 2017-03-20 | 袁正印; 张秋月; 顾俊俊 | 144h |  |
| 65 | 9 | **移动基地增值收费鉴权改造** |  | 16d | 2017-02-20 A | 2017-03-10 |  | 95% | 0.8d |  |  | 魏大高; 杨传波 | 368h | 349.6h |
| 66 | 9.1 | aaa模块鉴权流程调整 |  | 5d? | 2017-02-20 A | 2017-02-24 |  | 95% | 0.25d? | 234d | finish no earlier than 2017-02-24 | 魏大高 | 40h | 38h |
| 67 | 9.2 | 鉴权流程测试 |  | 9d? | 2017-02-28 A | 2017-03-10 |  | 95% | 0.45d? | 223d | finish no earlier than 2017-03-10 | 杨传波 | 72h | 68.4h |
| 68 | 10 | **山东移动魔百合二期增值** |  | 35d? | 2017-02-21 A | 2017-04-07 |  | 97% | 1.12d? | 203d |  | 韩耀强; 杨澄; 魏大高; 夏煜; 杨传波 | 2128h | 977.2h |
| 69 | 10.1 | 牌照商类型区分获取 |  | 12d? | 2017-02-21 A | 2017-03-07 A |  | 100% |  |  | finish no earlier than 2017-03-07 | 杨澄 | 96h | 96h |
| 70 | 10.2 | 产品订购选择 |  | 7d? | 2017-02-21 A | 2017-02-28 A |  | 100% |  |  | finish no earlier than 2017-02-28 | 韩耀强 | 56h | 56h |
| 71 | 10.3 | 产品订购 |  | 10d? | 2017-02-28 A | 2017-03-13 A |  | 100% |  |  | finish no earlier than 2017-03-13 | 韩耀强; 杨澄 | 160h | 160h |
| 72 | 10.4 | 退订 | inactive | 1d? | 2016-07-01 | 2016-07-01 |  |  |  | 404d |  |  |  |  |
| 73 | 10.5 | 华为订购信息同步 |  | 3d? | 2017-02-27 A | 2017-03-01 A |  | 100% |  |  | finish no earlier than 2017-03-01 | 韩耀强; 杨澄 | 48h | 48h |
| 74 | 10.6 | 增值产品的关系注入 |  | 3d? | 2017-03-02 A | 2017-03-06 | 73 | 90% | 0.3d? | 227d |  | 韩耀强 | 24h | 21.6h |
| 75 | 10.7 | Cis内容注入改造(点播+直播) |  | 7d? | 2017-02-22 A | 2017-03-01 |  | 90% | 0.7d? | 230d | finish no earlier than 2017-03-01 | 魏大高 | 56h | 50.4h |
| 76 | 10.8 | 电视精选的改造 | inactive | 1d? | 2016-07-01 | 2016-07-01 |  |  |  | 404d |  |  |  |  |
| 77 | 10.9 | Vis版NBA及英超的上线 | inactive | 1d? | 2016-07-01 | 2016-07-01 |  |  |  | 404d |  |  |  |  |
| 78 | 10.10 | 集成测试 |  | 19d? | 2017-03-14 A | 2017-04-07 | 71 | 95% | 0.95d? | 203d | finish no earlier than 2017-04-07 | 顾俊俊; 夏煜; 杨传波 | 456h | 433.2h |

Notes:
- 67: 基于聚合门户的终端版本

| ID | WBS | Task | Duration | Start | Finish | Predecessors | Complete | Remaining | Actual start | Total slack | Free slack | Constraint | Resources | Work | Actual work |
| --- | --- | --- | --- | --- | --- | --- | --- | --- | --- | --- | --- | --- | --- | --- | --- |
| 79 | 11 | **陕西移动二期增值+VIS版NBA/EPL** | 25d | 2017-03-13 | 2017-04-17 |  | 44% | 14.03d | 2017-01-03 |  |  |  |  | 328h | 126.4h |
| 80 | 11.1 | **增值** | 1d? | 2017-03-14 | 2017-03-14 |  |  |  |  | 221d |  |  |  | 48h |  |
| 81 | 11.1.1 | Cis内容注入改造(回看节目单+增值包关系) | 1d? | 2017-03-14 | 2017-03-14 |  |  |  |  | 221d |  |  | 魏大高 | 8h |  |
| 82 | 11.1.2 | Preboss（订购信息C3接口同步） | 1d? | 2017-03-14 | 2017-03-14 |  |  |  |  | 221d |  |  | 夏迎杰 | 8h |  |
| 83 | 11.1.3 | 终端 | 1d? | 2017-03-14 | 2017-03-14 |  |  |  |  | 221d |  |  | 徐斌 | 8h |  |
| 84 | 11.1.4 | WAG | 1d? | 2017-03-14 | 2017-03-14 |  |  |  |  | 221d |  |  | 黄笑龙 | 8h |  |
| 85 | 11.1.5 | 增值集成测试 | 1d? | 2017-03-14 | 2017-03-14 |  |  |  |  | 221d |  |  | 夏煜; 袁正印 | 16h |  |
| 86 | 11.2 | **Vis版NBA及英超落地(陕西)** | 21d | 2017-03-20 | 2017-04-17 |  | 51% | 10.3d | 2017-01-03 |  |  |  |  | 280h | 126.4h |
| 87 | 11.2.1 | C2Collect版本中增加节目单Code的采集并安排现网升级 | 1d? | 2017-01-10 A | 2017-01-10 A |  | 100% |  |  |  |  | finish no earlier than 2017-01-10 | 刘佳丽 | 8h | 8h |
| 88 | 11.2.2 | Live_epg版本调整节目单Code的输出规则 | 5d? | 2017-01-09 A | 2017-01-13 A |  | 100% |  |  |  |  | finish no earlier than 2017-01-13 | 邹崚 | 40h | 40h |
| 89 | 11.2.3 | Live_app的本地节目单导入功能增加节目单唯一Code功能 | 8d? | 2017-01-03 A | 2017-01-12 A |  | 100% |  |  |  |  | finish no earlier than 2017-01-12 | 邹崚 | 64h | 64h |
| 90 | 11.2.4 | Cis调整节目单Code的注入规则 | 2d? | 2017-01-09 A | 2017-01-10 |  | 90% | 0.2d? |  | 267d |  | finish no earlier than 2017-01-10 | 韩耀强 | 16h | 14.4h |
| 91 | 11.2.5 | Cis重新注入回看7天的节目单数据(策略？) | 1d? | 2017-01-13 | 2017-01-13 |  |  |  |  | 264d |  | start no earlier than 2017-01-13 | 韩耀强 | 8h |  |
| 92 | 11.2.6 | NBA及英超的存量点播节目的注入工作 | 5d? | 2017-01-11 | 2017-01-17 |  |  |  |  | 262d |  | finish no earlier than 2017-01-17 | 魏大高 | 40h |  |
| 93 | 11.2.7 | **应用业务回归及对接测试** | 9d | 2017-01-16 | 2017-01-26 |  |  |  |  |  |  |  |  | 104h |  |
| 94 | 11.2.7.1 | 电视精选回归测试机 | 3d? | 2017-01-16 | 2017-01-18 |  |  |  |  | 261d |  | finish no earlier than 2017-01-18 | 顾俊俊 | 24h |  |
| 95 | 11.2.7.2 | NBA业务现网对接测试 | 2d? | 2017-01-20 | 2017-01-23 |  |  |  |  | 258d |  | start no earlier than 2017-01-20 | 程伟(IPTV); 顾俊俊 | 32h |  |
| 96 | 11.2.7.3 | 英超现网业务对接测试 | 3d? | 2017-01-24 | 2017-01-26 |  |  |  |  | 255d |  | start no earlier than 2017-01-24 | 程伟(IPTV); 顾俊俊 | 48h |  |
| 97 | 11.2.7.4 | live_epg:延时跨天Bug | 1d? | 2017-01-16 | 2017-01-16 |  |  |  |  | 263d |  |  |  |  |  |
| 98 | 12 | **山东移动魔百合三期** | 39d? | 2017-03-17 A | 2017-05-10 |  | 61% | 15.36d? |  | 180d |  |  | 徐斌; 韩耀强; 胡奎; 刘佳丽; 魏大高; 夏煜; 杨传波; 夏迎杰 | 3488h | 2368.73h |
| 99 | 12.1 | **主牌照方Vis的NBA/EPG(暂停)** | 30d? | 2017-03-20 | 2017-04-28 |  |  |  |  | 188d |  |  |  |  |  |
| 100 | 12.1.1 | 终端研发 | 5d? | 2017-03-20 | 2017-03-24 |  |  |  |  | 213d |  | finish no earlier than 2017-03-24 |  |  |  |
| 101 | 12.1.2 | 平台研发 | 8d? | 2017-03-29 | 2017-04-07 |  |  |  |  | 201d | 9d | finish no earlier than 2017-04-07 |  |  |  |
| 102 | 12.1.3 | 集成测试 | 1d? | 2017-04-21 | 2017-04-21 | 101 |  |  |  | 192d | 4d | finish no earlier than 2017-04-21 |  |  |  |
| 103 | 12.1.4 | 运维部署 | 1d? | 2017-04-28 | 2017-04-28 | 102 |  |  |  | 188d |  | finish no earlier than 2017-04-28 |  |  |  |

Notes:
- 91: 需要给出7天回看节目单重新注入的策略？
- 92: 需要考虑存储的问题？

| ID | WBS | Task | Duration | Start | Finish | Predecessors | Complete | Remaining | Total slack | Free slack | Constraint | Resources | Work | Actual work |
| --- | --- | --- | --- | --- | --- | --- | --- | --- | --- | --- | --- | --- | --- | --- |
| 104 | 12.2 | **ZTE方案对接** | 39d? | 2017-03-17 A | 2017-05-10 |  | 78% | 8.41d? | 180d |  |  |  | 992h | 856h |
| 105 | 12.2.1 | 终端研发 | 10d? | 2017-03-20 A | 2017-03-31 A |  | 100% |  |  |  | finish no earlier than 2017-03-31 | 徐斌 | 80h | 80h |
| 106 | 12.2.2 | 平台研发 | 14d? | 2017-03-17 A | 2017-04-05 A |  | 100% |  |  |  | finish no earlier than 2017-04-05 | 韩耀强; 胡奎; 刘佳丽; 魏大高; 夏迎杰 | 560h | 560h |
| 107 | 12.2.3 | 联调测试 | 5d? | 2017-04-03 A | 2017-04-07 |  | 90% | 0.5d? | 199.5d | 0d | finish no earlier than 2017-04-07 | 夏煜; 杨传波 | 80h | 72h |
| 108 | 12.2.4 | 运维部署 | 5d? | 2017-04-10 A | 2017-04-14 | 107 | 50% | 2.5d? | 197d | 0d | finish no earlier than 2017-04-14 |  |  |  |
| 109 | 12.2.5 | 集成测试 | 10d? | 2017-04-17 A | 2017-04-28 | 108 | 90% | 1d? | 188d |  | finish no earlier than 2017-04-28 | 夏煜; 杨传波 | 160h | 144h |
| 110 | 12.2.6 | 提交APK驻地同步测试 | 7d? | 2017-05-02 | 2017-05-10 |  |  |  | 180d |  | finish no earlier than 2017-05-10 | 夏煜; 杨传波 | 112h |  |
| 111 | 13 | **安徽移动增值扫描支付+Preboss重构** | 33d? | 2017-04-17 A | 2017-05-31 |  | 69% | 10.31d? | 165d |  |  | 黄笑龙（外）; 夏迎杰; 杨传波; 张秋月 | 1120h | 770h |
| 112 | 13.1 | WAG扫描对接 | 1d? | 2017-04-17 A | 2017-04-17 A |  | 100% |  |  |  | start no earlier than 2017-04-17 | 黄笑龙 | 8h | 8h |
| 113 | 13.2 | Preboss重构+现网功能修复 | 1d? | 2017-04-17 A | 2017-04-17 |  | 90% | 0.1d? | 197d |  | start no earlier than 2017-04-17 | 夏迎杰 | 8h | 7.2h |
| 114 | 13.3 | 集成测试 | 6d? | 2017-05-24 A | 2017-05-31 |  | 60% | 2.4d? | 165d |  | finish no earlier than 2017-05-31 | 杨传波 张秋月 | 48h | 28.8h |
| 115 | 14 | **H264\H265现网Bug修复** | 17d | 2017-04-18 A | 2017-05-10 |  | 60% | 6.8d |  |  |  | 胡奎; 顾俊俊; 龚小琴; 李子花（外）; 杨传波 | 760h | 48h |
| 116 | 14.1 | 移动基地 | 1d? | 2017-05-04 A | 2017-05-04 |  | 50% | 0.5d? | 184d |  | finish no earlier than 2017-05-04 | 胡奎; 杨传波 | 16h | 8h |
| 117 | 14.2 | 黑龙江移动 | 0.5d? | 2017-05-04 A | 2017-05-04 A |  | 100% |  |  |  |  | 胡奎; 顾俊俊 | 8h | 8h |
| 118 | 14.3 | 江苏移动SP（暂停） | 0.5d? | 2017-04-18 | 2017-04-18 |  |  |  | 196.5d |  |  | 胡奎; 顾俊俊 | 8h |  |
| 119 | 14.4 | 江苏移动CP | 0.5d? | 2017-04-18 | 2017-04-18 |  |  |  | 196.5d |  |  | 胡奎; 顾俊俊 | 8h |  |
| 120 | 14.5 | 安徽移动 | 0.5d? | 2017-05-04 A | 2017-05-04 A |  | 100% |  |  |  |  | 胡奎; 顾俊俊 | 8h | 8h |
| 121 | 14.6 | 上海长宽 | 0.5d? | 2017-05-04 A | 2017-05-04 A |  | 100% |  |  |  |  | 胡奎; 龚小琴 | 8h | 8h |
| 122 | 14.7 | 湖北移动 | 0.5d? | 2017-04-18 | 2017-04-18 |  |  |  | 196.5d |  |  | 胡奎; 顾俊俊 | 8h |  |
| 123 | 14.8 | 贵州电信 | 0.5d? | 2017-05-04 A | 2017-05-04 A |  | 100% |  |  |  |  | 胡奎; 顾俊俊 | 8h | 8h |
| 124 | 14.9 | 歌华 | 0.5d? | 2017-05-04 A | 2017-05-04 A |  | 100% |  |  |  |  | 胡奎; 李子花（外） | 8h | 8h |
| 125 | 15 | **移动基地鉴权容灾处理** | 10d | 2017-05-02 A | 2017-05-15 |  | 90% | 1d |  |  |  | 魏大高; 胡奎; 杨传波 | 312h | 72h |
| 126 | 15.1 | AAA鉴权容错改造 | 4d? | 2017-05-02 A | 2017-05-05 A |  | 100% |  |  |  | start no earlier than 2017-05-02 | 魏大高 | 32h | 32h |
| 127 | 15.2 | PS容错是AuthCode的赋值改造 | 4d? | 2017-05-02 A | 2017-05-05 A |  | 100% |  |  |  | start no earlier than 2017-05-02 | 胡奎 | 32h | 32h |
| 128 | 15.3 | 集成测试 | 1d? | 2017-05-12 A | 2017-05-12 A | 127 | 100% |  |  |  | finish no earlier than 2017-05-12 | 杨传波 | 8h | 8h |
| 129 | 15.4 | 运维部署 | 1d? | 2017-05-12 | 2017-05-12 |  |  |  | 178d |  | start no earlier than 2017-05-12 |  |  |  |

| ID | WBS | Task | Duration | Start | Finish | Predecessors | Complete | Remaining | Total slack | Free slack | Constraint | Resources | Work | Actual work |
| --- | --- | --- | --- | --- | --- | --- | --- | --- | --- | --- | --- | --- | --- | --- |
| 130 | 16 | **富士康-便当盒** | 28d? | 2017-05-17 A | 2017-06-23 |  | 97% | 0.9d? | 148d |  |  | 陈爽（外）; 龚小琴; 邵磊（）; 施燕; 魏大高 | 1528h | 1482.45h |
| 131 | 16.1 | AAA模块 | 13d? | 2017-05-17 A | 2017-06-02 A |  | 100% |  |  |  | finish no earlier than 2017-06-02 | 韩耀强 | 104h | 104h |
| 132 | 16.2 | Preboss | 13d? | 2017-05-17 A | 2017-06-02 A |  | 100% |  |  |  | finish no earlier than 2017-06-02 | 邵磊（外） | 104h | 104h |
| 133 | 16.3 | Epg模块 | 13d? | 2017-05-17 A | 2017-06-02 A |  | 100% |  |  |  | start no earlier than 2017-05-17 |  |  |  |
| 134 | 16.4 | Search/Export | 13d? | 2017-05-17 A | 2017-06-02 A |  | 100% |  |  |  | start no earlier than 2017-05-17 |  |  |  |
| 135 | 16.5 | 终端 | 13d? | 2017-05-17 A | 2017-06-02 A |  | 100% |  |  |  | start no earlier than 2017-05-17 | 陈爽（外） | 104h | 104h |
| 136 | 16.6 | AAA+Preboss+Epg+终端+富士康 | 6d? | 2017-06-02 A | 2017-06-09 |  | 90% | 0.6d? | 156d | 0d | start no earlier than 2017-06-02 | 龚小琴; 施燕 | 96h | 86.4h |
| 137 | 16.7 | 集成测试 | 10d? | 2017-06-12 A | 2017-06-23 | 136 | 80% | 2d? | 148d |  | start no earlier than 2017-06-12 |  |  |  |
| 138 | 17 | **安徽移动（营销+H5九宫格）** | 5d | 2017-06-07 | 2017-06-13 |  |  |  |  |  |  |  | 24h |  |
| 139 | 17.1 | PS模块SchduleCode鉴权方式调整 | 1d? | 2017-06-07 | 2017-06-07 |  |  |  | 160d |  |  | 胡奎 | 8h |  |
| 140 | 17.2 | Wag模块，营销接口对接 | 1d? | 2017-06-07 | 2017-06-07 |  |  |  | 160d |  |  | 韩耀强 | 8h |  |
| 141 | 17.3 | 非同一Launcher版本升级3.1 | 1d? | 2017-06-07 | 2017-06-07 |  |  |  | 160d |  |  | 丁翠（外）李子花 | 8h |  |
| 142 | 18 | **贵州电信营销平台对接** | 3d | 2017-06-12 | 2017-06-14 |  |  |  |  |  |  | 韩耀强; 顾俊俊 李晨佳 | 56h |  |
| 143 | 18.1 | WAG模块营销阶段对接 | 1d? | 2017-06-12 | 2017-06-12 |  |  |  | 157d |  |  | 顾俊俊 李晨佳 | 8h |  |
| 144 | 19 | **上海长宽双认证** | 13d | 2017-06-28 | 2017-07-14 |  |  |  |  |  |  | 龚小琴; 韩耀强; 邵磊（外）; 施燕（外）; 熊杰（外） | 520h |  |
| 145 | 19.1 | AAA模块开发 | 1d? | 2017-06-28 | 2017-06-28 |  |  |  | 145d |  |  |  |  |  |
| 146 | 19.2 | Preboss模块开发 | 1d? | 2017-06-28 | 2017-06-28 |  |  |  | 145d |  |  |  |  |  |
| 147 | 19.3 | Wag模块开发 | 1d? | 2017-06-28 | 2017-06-28 |  |  |  | 145d |  |  |  |  |  |
| 148 | 19.4 | 终端版本开发 | 1d? | 2017-06-28 | 2017-06-28 |  |  |  | 145d |  |  |  |  |  |
| 149 | 19.5 | 集成测试 | 1d? | 2017-06-28 | 2017-06-28 |  |  |  | 145d |  |  |  |  |  |
| 150 | 20 | **2C的WAG版本迭代开发** | 36d | 2017-07-03 | 2017-08-21 |  |  |  |  |  |  | 顾俊俊 | 288h |  |
| 151 | 20.1 | 集成测试 | 5d | 2017-08-14 | 2017-08-18 |  |  |  | 2780d |  | start no earlier than 2017-08-14 |  |  |  |
| 152 | 20.2 | 研发测试 | 1d? | 2017-07-03 | 2017-07-03 |  |  |  | 2814d |  |  |  |  |  |
| 153 | 20.3 | 待部署 | 1d? | 2017-07-03 | 2017-07-03 |  |  |  | 2814d |  |  |  |  |  |

| ID | WBS | Task | Duration | Start | Finish | Predecessors | Total slack | Free slack | Constraint | Resources | Work |
| --- | --- | --- | --- | --- | --- | --- | --- | --- | --- | --- | --- |
| 154 | 21 | **2CWag的闪付功能** | 3d | 2017-07-03 | 2017-07-05 |  |  |  |  | PS | 24h |
| 155 | 21.1 | 功能研发 | 3d | 2017-07-03 | 2017-07-05 |  | 2812d |  |  |  |  |
| 156 | 21.2 | 集成测试 | 3d | 2017-07-03 | 2017-07-05 |  | 2812d |  |  |  |  |
| 157 | 22 | **内容注入Cis模块：缺陷及功能优化** | 23d | 2017-07-01 | 2017-08-01 |  |  |  |  | 刘佳丽; 魏大高; 袁正印 | 552h |
| 158 | 22.1 | Cis代码开发 | 1d? | 2017-07-03 | 2017-07-03 |  | 142d |  |  |  |  |
| 159 | 22.2 | syncProcess开发 | 1d? | 2017-07-03 | 2017-07-03 |  | 142d |  |  |  |  |
| 160 | 22.3 | 集成测试 | 1d? | 2017-07-03 | 2017-07-03 |  | 142d |  |  |  |  |
| 161 | 23 | **陕西移动副牌照业务** | 64d | 2017-07-03 | 2017-09-28 |  |  |  |  | 顾俊俊; 韩耀强; 魏大高; 夏煜; 杨澄; 袁正印; 张秋月 | 3584h |
| 162 | 23.1 | WAG营销Vis对接 | 7d? | 2017-07-03 | 2017-07-11 |  | 136d |  |  |  |  |
| 163 | 23.2 | 副牌照增值 | 7d? | 2017-07-03 | 2017-07-11 |  | 136d |  |  |  |  |
| 164 | 23.3 | 对接测试 | 10d? | 2017-08-28 | 2017-09-08 |  | 80d | 0d | finish no earlier than 2017-09-08 |  |  |
| 165 | 23.4 | 集成测试支持 | 13d? | 2017-09-11 | 2017-09-27 | 164 | 80d |  | start no earlier than 2017-09-11 |  |  |
| 166 | 24 | **联想项目** | 31d? | 2017-08-11 | 2017-09-22 |  | 83d |  |  | 韩耀强; 邵磊（外）; 夏煜; 徐斌 | 992h |
| 167 | 24.1 | 平台研发 | 11d? | 2017-08-25 | 2017-09-08 |  | 93d |  | finish no earlier than 2017-09-08 |  |  |
| 168 | 24.2 | 对接测试 | 31d? | 2017-08-11 | 2017-09-22 |  | 83d |  | finish no earlier than 2017-09-22 |  |  |
| 169 | 25 | **品友广告** | 107d | 2017-08-22 | 2018-01-17 |  |  |  |  | 刘佳丽; 施燕（外）; 赖明江 | 2568h |
| 170 | 25.1 | 素材元数据同步 | 1d? | 2017-08-22 | 2017-08-22 |  | 106d |  |  |  |  |
| 171 | 25.2 | 素材审核管理系统 | 1d? | 2017-08-22 | 2017-08-22 |  | 106d |  |  |  |  |
| 172 | 26 | **安徽移动改造** | 29d | 2017-09-21 | 2017-10-31 |  |  |  |  | 韩耀强; 袁正印; 张超（外部）; 张秋月 | 928h |
| 173 | 26.1 | 异网用户接入 | 1d? | 2017-09-21 | 2017-09-21 |  | 2756d |  |  |  |  |
| 174 | 26.2 | 新的结算方式 | 1d? | 2017-09-21 | 2017-09-21 |  | 2756d |  |  |  |  |
| 175 | 26.3 | 终端5.0版本 | 1d? | 2017-09-21 | 2017-09-21 |  | 2756d |  |  |  |  |
| 176 | 26.4 | WAG适配5.0 | 1d? | 2017-09-21 | 2017-09-21 |  | 2756d |  |  |  |  |
| 177 | 27 | **TMS/Upgrade的迭代开发** | 1d? | 2017-09-14 | 2017-09-14 |  |  |  |  | 顾俊俊; 邵磊（外）; 施燕 | 24h |
| 178 | 27.1 | 开发 | 1d? | 2017-09-14 | 2017-09-14 |  | 89d |  |  |  |  |
| 179 | 27.2 | 测试 | 1d? | 2017-09-14 | 2017-09-14 |  | 89d |  |  |  |  |

| ID | WBS | Task | Duration | Start | Finish | Total slack | Constraint | Resources | Work |
| --- | --- | --- | --- | --- | --- | --- | --- | --- | --- |
| 180 | 28 | **巧虎** | 87d | 2017-09-18 | 2018-01-16 |  |  | 魏大高; 李晨嘉; 陈爽 | 2088h |
| 181 | 28.1 | 待启动 | 1d? | 2017-09-18 | 2017-09-18 | 87d |  |  |  |
| 182 | 29 | **PS统一鉴权支持H5电视精选落地** | 66d | 2017-10-17 | 2018-01-16 |  |  | 顾俊俊; 刘佳丽; 施燕 | 1808h |
| 183 | 29.1 | 安徽移动 | 1d? | 2017-10-17 | 2017-10-17 | 66d |  |  |  |
| 184 | 29.2 | 移动基地 | 1d? | 2017-10-17 | 2017-10-17 | 66d |  |  |  |
| 185 | 29.3 | 2C | 1d? | 2017-10-17 | 2017-10-17 | 66d |  |  |  |
| 186 | 29.4 | 安徽电信 | 1d? | 2017-10-17 | 2017-10-17 | 66d |  |  |  |
| 187 | 29.5 | 上海长宽 | 1d? | 2017-10-17 | 2017-10-17 | 66d |  |  |  |
| 188 | 29.6 | **贵州电信-3.1版本接入新AAA** | 13d | 2017-10-17 | 2017-11-02 |  |  | 李晨嘉; 魏大高 | 208h |
| 189 | 29.6.1 | 脚本数据迁移处理 | 12d? | 2017-10-17 | 2017-11-01 | 55d | start no earlier than 2017-10-17 |  |  |
| 190 | 29.7 | **2C:现网实现剧集限免功能** | 1d? | 2017-10-17 | 2017-10-17 | 66d |  | 李晨嘉; 魏大高 | 16h |
| 191 | 29.7.1 | AAA模块 | 1d? | 2017-10-17 | 2017-10-17 | 66d |  |  |  |
| 192 | 29.7.2 | PS模块 | 1d? | 2017-10-17 | 2017-10-17 | 66d |  |  |  |
| 193 | 30 | **咪咕移动一期** | 27d | 2017-11-23 | 2017-12-29 |  |  | 胡奎; 黄笑龙（外）; 夏迎杰; 顾俊俊; 李子花（外）; 刘佳丽; 夏煜; 杨澄 | 1728h |
| 194 | 30.1 | 终端个人中心定制化 | 1d? | 2017-11-23 | 2017-11-23 | 39d |  |  |  |
| 195 | 30.2 | 终端平台及秘密定制化接口 | 1d? | 2017-11-23 | 2017-11-23 | 39d |  |  |  |
| 196 | 30.3 | PS定制化 | 1d? | 2017-11-23 | 2017-11-23 | 39d |  |  |  |
| 197 | 30.4 | 其他模块采用服务化版本 | 1d? | 2017-11-23 | 2017-11-23 | 39d |  |  |  |
| 198 | 30.5 | 功能测试不包括性能测试 | 1d? | 2017-11-23 | 2017-11-23 | 39d |  |  |  |
