Schedule from MS Project, 2017-11-23 to 2019-01-25, A marks actual dates.
Microsoft

## Calendars

- 标准: Mon-Fri 08:00-12:00, 13:00-17:00; Sat-Sun off.

## Resources

| Resource | Group | Notes |
| --- | --- | --- |
| 邹崚(外) | 百视通 |  |
| 夏迎杰 | 红领巾敏捷开发团队 |  |
| 胡奎 | 百视通 |  |
| 韩耀强 | 百视通 | 红领巾敏捷开发团队 |
| 魏大高 | 百视通 |  |
| 杨澄 | 百视通 |  |
| 徐斌 | 百视通 |  |
| 杨传波 | 百视通 |  |
| 夏煜 | 百视通 |  |
| 袁正印 | 百视通 |  |
| 张秋月 | 百视通 |  |
| 陈佳培(项目经理) | 百视通 |  |
| 黄笑龙(外) | 百视通 |  |
| 刘佳丽(外) | 百视通 |  |
| 邵磊(外) | 百视通 |  |
| 李子花(外) | 百视通 |  |
| 李晨嘉(外) | 百视通 |  |
| 顾俊俊(外) | 百视通 |  |
| 盛立波(项目经理外) | 百视通 |  |
| 谢春龙(项目经理外) |  |  |
| 阎柏彤(项目经理外) |  |  |
| 龚晓琴(外) |  |  |
| 曹飞飞（项目经理外） |  |  |
| 张超(外) |  |  |
| 王明冬 |  |  |
| 丁翠 |  |  |
| 魏大高 |  |  |
| 魏大高 |  |  |
| 魏大高 |  |  |
| 魏大高 |  |  |

## Schedule

| ID | WBS | Task | Type | Duration | Start | Finish | Complete | Resources | Work | Actual work |
| --- | --- | --- | --- | --- | --- | --- | --- | --- | --- | --- |
| 1 | 1 | **咪咕移动一期** |  | 27d | 2017-11-23 A | 2017-12-29 A | 100% | 李子花(外); 杨澄; 杨传波; 顾俊俊(外); 胡奎; 黄笑龙(外); 刘佳丽(外); 夏迎杰; 夏煜 | 1944h | 1944h |
| 2 | 1.1 | 终端个人中心定制化 | manual | 1d | 2017-11-23 A | 2017-11-24 A | 100% |  |  |  |
| 3 | 1.2 | 终端平台及秘密定制化接口 | manual | 1d | 2017-11-23 A | 2017-11-24 A | 100% |  |  |  |
| 4 | 1.3 | PS定制化 | manual | 1d | 2017-11-23 A | 2017-11-24 A | 100% |  |  |  |
| 5 | 1.4 | 其他模块采用服务化版本 | manual | 1d | 2017-11-23 A | 2017-11-24 A | 100% |  |  |  |
| 6 | 1.5 | 功能测试不包括性能测试 | manual | 1d | 2017-11-23 A | 2017-11-24 A | 100% |  |  |  |
| 8 | 2 | **安徽移动统一门户终端升级5.0需求** |  | 35d | 2017-12-05 A | 2018-01-22 A | 100% | 陈佳培(项目经理); 张秋月; 张超(外) | 840h | 840h |
| 9 | 2.1 | 终端出版本 | manual | 1d | 2017-12-05 A | 2017-12-06 A | 100% |  |  |  |
| 11 | 3 | **安徽移动VIS新东方增值上线** |  | 6d | 2018-01-02 A | 2018-01-09 A | 100% | 陈佳培(项目经理); 韩耀强; 袁正印 | 144h | 144h |
| 12 | 3.1 | 终端 | manual | 1d | 2018-01-02 A | 2018-01-03 A | 100% |  |  |  |
| 13 | 3.2 | 平台 | manual | 1d | 2018-01-02 A | 2018-01-03 A | 100% |  |  |  |
| 15 | 4 | **安徽移动和包支付—大需求** |  | 48d | 2018-01-22 A | 2018-03-28 A | 100% | 邵磊(外); 袁正印; 张秋月 | 1536h | 1536h |
| 16 | 4.1 | 和支付方案及产品Review | manual | 3d | 2018-01-22 A | 2018-01-24 A | 100% |  |  |  |
| 17 | 4.2 | wag模块开发 | manual | 10d | 2018-01-22 A | 2018-02-02 A | 100% |  |  |  |
| 18 | 4.3 | 研发对接测试-春节后 | manual | 4d | 2018-02-05 A | 2018-02-08 A | 100% |  |  |  |
| 19 | 4.4 | 研发对接测试-春节后 | manual | 5d | 2018-02-23 A | 2018-03-02 A | 100% |  |  |  |
| 20 | 4.5 | 集成测试 | manual | 18d | 2018-03-05 A | 2018-03-28 A | 100% |  |  |  |
| 22 | 5 | **辽宁移动终端TAB页切换加速优化需求** |  | 8d | 2018-01-22 A | 2018-01-31 A | 100% | 陈佳培(项目经理); 杨澄; 张秋月 | 192h | 192h |
| 23 | 5.1 | 终端出版本 | manual | 1d | 2018-01-22 A | 2018-01-23 A | 100% |  |  |  |
| 25 | 6 | **安徽移动清算-补充数据** |  | 21d | 2018-01-12 A | 2018-02-09 A | 100% | 韩耀强; 袁正印; 陈佳培(项目经理) | 504h | 504h |
| 26 | 6.1 | 需求，方案讨论 | manual | 11d | 2018-01-12 A | 2018-01-26 A | 100% |  |  |  |
| 27 | 6.2 | 工具化模块开发 | manual | 11d | 2018-01-12 A | 2018-01-26 A | 100% |  |  |  |
| 28 | 6.3 | 集成测试 | manual | 9d | 2018-01-30 A | 2018-02-09 A | 100% |  |  |  |
| 30 | 7 | **北京移动一期** |  | 23d | 2018-01-01 A | 2018-01-31 A | 100% | 顾俊俊(外); 夏煜; 徐斌; 谢春龙(项目经理外) | 736h | 736h |
| 31 | 7.1 | 方案评估 | manual | 1d | 2018-01-01 A | 2018-01-02 A | 100% |  |  |  |
| 32 | 7.2 | 终端版本定制开发 | manual | 1d | 2018-01-01 A | 2018-01-02 A | 100% |  |  |  |
| 33 | 7.3 | 研发对接测试 | manual | 1d | 2018-01-01 A | 2018-01-02 A | 100% |  |  |  |
| 34 | 7.4 | 集成测试 | manual | 1d | 2018-01-01 A | 2018-01-02 A | 100% |  |  |  |
| 35 | 7.5 | <新任务> | manual | 1d | 2018-01-01 A | 2018-01-02 A | 100% |  |  |  |

Notes:
- 15: 春节期间研发对接测试人员额外休假7天

| ID | WBS | Task | Type | Duration | Start | Finish | Complete | Resources | Work | Actual work |
| --- | --- | --- | --- | --- | --- | --- | --- | --- | --- | --- |
| 36 | 8 | **北京移动一期-需求调整** |  | 6d | 2018-03-23 A | 2018-03-30 A | 100% | 顾俊俊(外); 夏煜; 徐斌; 谢春龙(项目经理外) | 192h | 192h |
| 37 | 8.1 | 推荐位返回路径问题 | manual | 1d | 2018-03-23 A | 2018-03-26 A | 100% |  |  |  |
| 38 | 8.2 | <新任务> | manual | 1d | 2018-03-23 A | 2018-03-26 A | 100% |  |  |  |
| 40 | 9 | **山东移动-对接VSS—大需求** |  | 57d | 2018-01-15 A | 2018-04-03 A | 100% | 魏大高; 杨传波; 谢春龙(项目经理外); 夏煜; 刘佳丽(外) | 2280h | 2280h |
| 41 | 9.1 | 订购支付流程 | manual | 5d | 2018-01-15 A | 2018-01-19 A | 100% |  |  |  |
| 42 | 9.2 | 后台接口开发 | manual | 5d | 2018-01-22 A | 2018-01-26 A | 100% |  |  |  |
| 43 | 9.3 | UI开发调整 | manual | 9d | 2018-01-29 A | 2018-02-08 A | 100% |  |  |  |
| 44 | 9.4 | 研发对接测试 | manual | 24d | 2018-02-09 A | 2018-03-14 A | 100% |  |  |  |
| 45 | 9.5 | 集成测试 | manual | 15d | 2018-03-14 A | 2018-04-03 A | 100% |  |  |  |
| 47 | 10 | **咪咕公网二期—新建类** |  | 16d | 2018-01-18 A | 2018-02-08 A | 100% | 胡奎; 李子花(外); 夏迎杰; 谢春龙(项目经理外) | 512h | 512h |
| 48 | 10.1 | 咪咕用户信息同步 | manual | 5d | 2018-01-18 A | 2018-01-24 A | 100% |  |  |  |
| 49 | 10.2 | 研发对接测试 | manual | 4d | 2018-01-25 A | 2018-01-30 A | 100% |  |  |  |
| 50 | 10.3 | 集成测试 | manual | 7d | 2018-01-31 A | 2018-02-08 A | 100% |  |  |  |
| 52 | 11 | **系统化改造** |  | 23d | 2018-01-15 A | 2018-02-14 A | 100% | 胡奎; 刘佳丽(外); 夏迎杰; 黄笑龙(外) | 736h | 736h |
| 53 | 11.1 | PS的BI日志优化 | manual | 1d | 2018-01-15 A | 2018-01-16 A | 100% |  |  |  |
| 54 | 11.2 | AAA的BI日志优化 | manual | 1d | 2018-01-15 A | 2018-01-16 A | 100% |  |  |  |
| 55 | 11.3 | PS降级 | manual | 1d | 2018-01-15 A | 2018-01-16 A | 100% |  |  |  |
| 56 | 11.4 | 增加测试页面 | manual | 1d | 2018-01-15 A | 2018-01-16 A | 100% |  |  |  |
| 57 | 11.5 | 内部接口参数优化 | manual | 1d | 2018-01-15 A | 2018-01-16 A | 100% |  |  |  |
| 58 | 11.6 | 其他 | manual | 1d | 2018-01-15 A | 2018-01-16 A | 100% |  |  |  |
| 60 | 12 | **内蒙古移动门户落地—新建类** |  | 7d | 2018-02-06 A | 2018-02-14 A | 100% | 黄笑龙(外); 杨传波; 阎柏彤(项目经理外) | 168h | 168h |
| 61 | 12.1 | 方案评估 | manual | 1d | 2018-02-07 A | 2018-02-07 A | 100% |  |  |  |
| 62 | 12.2 | AAA落地定制 | manual | 2d | 2018-02-08 A | 2018-02-09 A | 100% |  |  |  |
| 63 | 12.3 | 测试 | manual | 4d | 2018-02-11 A | 2018-02-14 A | 100% |  |  |  |

| ID | WBS | Task | Type | Duration | Start | Finish | Complete | Resources | Work | Actual work |
| --- | --- | --- | --- | --- | --- | --- | --- | --- | --- | --- |
| 65 | 13 | **联想三明治(采用服务化版本)—新建类** |  | 32d | 2018-02-26 A | 2018-04-10 A | 100% | 黄笑龙(外); 夏煜; 徐斌; 杨传波; 张秋月; 邹崚(外); 夏迎杰; 刘佳丽(外); 盛立波(项目经理外) | 2304h | 2304h |
| 66 | 13.1 | 方案评审-基础部分 | manual | 1d | 2018-02-26 A | 2018-02-27 A | 100% |  |  |  |
| 67 | 13.2 | 方案评审-增值部分 | manual | 1d | 2018-02-26 A | 2018-02-27 A | 100% |  |  |  |
| 68 | 13.3 | 终端版本采用服务化版本开发对接 | manual | 6d | 2018-02-26 A | 2018-03-05 A | 100% |  |  |  |
| 69 | 13.4 | 终端增值等定制化部分开发对接 | manual | 7d | 2018-03-07 A | 2018-03-15 A | 100% |  |  |  |
| 70 | 13.5 | AAA_Adaptor定制 | manual | 10d | 2018-02-26 A | 2018-03-09 A | 100% |  |  |  |
| 71 | 13.6 | PS_Adaptor定制 | manual | 5d | 2018-03-07 A | 2018-03-13 A | 100% |  |  |  |
| 72 | 13.7 | MSDS定制对接 | manual | 11d | 2018-02-26 A | 2018-03-10 A | 100% |  |  |  |
| 73 | 13.8 | WAG定制(架构调整可集成OrderCore) | manual | 5d | 2018-03-01 A | 2018-03-07 A | 100% |  |  |  |
| 74 | 13.9 | 百视通测对接环境部署（MSDS，AAA，PS等...） | manual | 2d | 2018-03-16 A | 2018-03-19 A | 100% |  |  |  |
| 75 | 13.10 | 联想+百视通联合测试 | manual | 16d | 2018-03-20 A | 2018-04-10 A | 100% |  |  |  |
| 77 | 14 | **安徽移动Redis功能恢复** |  | 3d | 2018-02-26 A | 2018-02-28 A | 100% | 韩耀强; 袁正印; 张秋月; 陈佳培(项目经理) | 96h | 96h |
| 78 | 14.1 | 代码调整 | manual | 1d | 2018-02-26 A | 2018-02-27 A | 100% |  |  |  |
| 79 | 14.2 | 测试 | manual | 1d | 2018-02-26 A | 2018-02-27 A | 100% |  |  |  |
| 82 | 15 | **陕西移动-小需求** |  | 11d | 2018-03-21 A | 2018-04-04 A | 100% | 夏迎杰; 曹飞飞（项目经理外） | 264h | 264h |
| 83 | 15.1 | 需求及方案讨论 | manual | 1d | 2018-03-21 A | 2018-03-21 A | 100% |  |  |  |
| 84 | 15.2 | C3开户数据补漏 | manual | 2d | 2018-03-22 A | 2018-03-23 A | 100% |  |  |  |
| 85 | 15.3 | 研发对接测试 | manual | 1d | 2018-03-27 A | 2018-03-27 A | 100% |  |  |  |
| 86 | 15.4 | 集成测试 | manual | 5d | 2018-03-28 A | 2018-04-03 A | 100% |  |  |  |
| 88 | 16 | **陕西移动中兴平台对接-大需求** |  | 13d | 2018-03-22 A | 2018-04-08 A | 100% | 夏迎杰; 袁正印; 曹飞飞（项目经理外） | 312h | 312h |
| 89 | 16.1 | 新增和ZTE平台进行用户数据对接 | manual | 1d | 2018-03-22 A | 2018-03-23 A | 100% |  |  |  |
| 91 | 17 | **辽宁移动讯飞语音适配需求** |  | 27d | 2018-03-05 A | 2018-04-10 A | 100% | 陈佳培(项目经理); 杨澄; 张超(外); 张秋月 | 864h | 864h |
| 92 | 17.1 | 终端适配 | manual | 1d | 2018-03-05 A | 2018-03-06 A | 100% |  |  |  |
| 94 | 18 | **咪咕公网三期+多屏互动—大需求** |  | 41d | 2018-03-05 A | 2018-04-30 A | 100% | 韩耀强; 刘佳丽(外); 杨澄; 袁正印; 张秋月; 谢春龙(项目经理外) | 1968h | 1968h |
| 95 | 18.1 | 方案评审 | manual | 3d | 2018-03-06 A | 2018-03-08 A | 100% |  |  |  |
| 96 | 18.2 | PRD及UI-FLOW评审 | manual | 3d | 2018-03-12 A | 2018-03-14 A | 100% |  |  |  |
| 97 | 18.3 | 终端多屏功能开发 | manual | 8d | 2018-03-07 A | 2018-03-16 A | 100% |  |  |  |
| 98 | 18.4 | 多屏研发对接测试 | manual | 5d | 2018-03-19 A | 2018-03-23 A | 100% |  |  |  |
| 99 | 18.5 | 终端增值开发 | manual | 5d | 2018-03-19 A | 2018-03-23 A | 100% |  |  |  |
| 100 | 18.6 | 平台WAG订购支付开发 | manual | 10d | 2018-03-12 A | 2018-03-23 A | 100% |  |  |  |
| 101 | 18.7 | WAG研发对接测试 | manual | 5d | 2018-03-26 A | 2018-03-30 A | 100% |  |  |  |
| 102 | 18.8 | 平台PS鉴权开发 | manual | 6d | 2018-03-15 A | 2018-03-22 A | 100% |  |  |  |
| 103 | 18.9 | PS研发对接测试 | manual | 3d | 2018-03-23 A | 2018-03-27 A | 100% |  |  |  |
| 104 | 18.10 | 集成测试 | manual | 21d | 2018-04-02 A | 2018-04-30 A | 100% |  |  |  |

Notes:
- 69: 3月15日早晨提供支付SDK，目前开发对接后延7天
- 94: 多屏和阳光计划都依赖对方的SDK，整体评估比较理想，后期延期风险非常大

| ID | WBS | Task | Type | Duration | Start | Finish | Complete | Resources | Work | Actual work |
| --- | --- | --- | --- | --- | --- | --- | --- | --- | --- | --- |
| 107 | 19 | **贵州电信多彩—大需求** |  | 24d | 2018-04-10 A | 2018-05-11 A | 100% | 魏大高; 李晨嘉(外) | 384h | 384h |
| 108 | 19.1 | 方案review | manual | 2d | 2018-04-10 A | 2018-04-11 A | 100% |  |  |  |
| 109 | 19.2 | WAG后台接口开发 | manual | 4d | 2018-04-12 A | 2018-04-17 A | 100% |  |  |  |
| 110 | 19.3 | WAG前端UI开发 | manual | 3d | 2018-04-18 A | 2018-04-20 A | 100% |  |  |  |
| 111 | 19.4 | 与多彩平台对接 | manual | 6d | 2018-04-23 A | 2018-04-28 A | 100% |  |  |  |
| 112 | 19.5 | 集成测试 | manual | 7d | 2018-05-02 A | 2018-05-10 A | 100% |  |  |  |
| 114 | 20 | **贵州电信点卡功能支持—小需求** |  | 5d | 2018-04-12 A | 2018-04-18 A | 100% | 胡奎; 李晨嘉(外) | 80h | 80h |
| 115 | 20.1 | AAA代码调整 | manual | 3d | 2018-04-12 A | 2018-04-16 A | 100% |  |  |  |
| 116 | 20.2 | 测试 | manual | 2d | 2018-04-17 A | 2018-04-18 A | 100% |  |  |  |
| 119 | 21 | **unicorn一期** |  | 33d | 2018-04-09 A | 2018-05-23 A | 100% | 顾俊俊(外); 胡奎; 黄笑龙(外); 李子花(外) | 1056h | 1056h |
| 120 | 21.1 | 平台侧开发 | manual | 13d | 2018-04-09 A | 2018-04-25 A | 100% |  |  |  |
| 121 | 21.2 | 终端侧开发 | manual | 13d | 2018-04-09 A | 2018-04-25 A | 100% |  |  |  |
| 122 | 21.3 | OTT平台+手机平台+终端的三方联调 | manual | 8d | 2018-04-23 A | 2018-05-02 A | 100% |  |  |  |
| 123 | 21.4 | 集成测试 | manual | 1d | 2018-04-09 A | 2018-04-10 A | 100% |  |  |  |
| 127 | 22 | **辽宁移动增值二期** |  | 38d | 2018-07-04 A | 2018-08-24 A | 100% | 韩耀强; 魏大高; 袁正印; 张秋月 | 1216h | 1216h |
| 128 | 22.1 | WAG:人人E购接口对接 | manual | 23d | 2018-07-04 A | 2018-08-03 A | 100% |  |  |  |
| 129 | 22.2 | WAG:能开接口对接 | manual | 1d | 2018-07-04 A | 2018-07-05 A | 100% |  |  |  |
| 130 | 22.3 | WAG:待订购产品信息流程调整 | manual | 1d | 2018-07-04 A | 2018-07-05 A | 100% |  |  |  |
| 131 | 22.4 | WAG:的UI_Flow流程开发 | manual | 1d | 2018-07-04 A | 2018-07-05 A | 100% |  |  |  |
| 132 | 22.5 | 研发对接测试 | manual | 5d | 2018-08-06 A | 2018-08-10 A | 100% |  |  |  |
| 133 | 22.6 | 集成测试 | manual | 10d | 2018-08-13 A | 2018-08-24 A | 100% |  |  |  |
| 136 | 23 | **移动基地-容灾** |  | 13d | 2018-07-23 A | 2018-08-08 A | 100% | 黄笑龙(外); 刘佳丽(外); 杨传波 | 312h | 312h |
| 137 | 23.1 | PS模块 | manual | 3d | 2018-07-23 A | 2018-07-25 A | 100% |  |  |  |
| 138 | 23.2 | AAA模块 | manual | 5d | 2018-07-24 A | 2018-07-30 A | 100% |  |  |  |
| 139 | 23.3 | 研发自测 | manual | 2d | 2018-07-31 A | 2018-08-01 A | 100% |  |  |  |
| 140 | 23.4 | 集成测试 | manual | 5d | 2018-08-02 A | 2018-08-08 A | 100% |  |  |  |

| ID | WBS | Task | Type | Duration | Start | Finish | Complete | Resources | Work | Actual work |
| --- | --- | --- | --- | --- | --- | --- | --- | --- | --- | --- |
| 142 | 24 | **PS5.2版本开发** |  | 20d | 2018-07-23 A | 2018-08-17 A | 100% | 顾俊俊(外); 胡奎; 李子花(外) | 480h | 480h |
| 143 | 24.1 | 直播频道收费(不具备商用条件，商用时需要再测试) | manual | 1d | 2018-07-23 A | 2018-07-24 A | 100% |  |  |  |
| 144 | 24.2 | 鉴权订购流程优化 | manual | 1d | 2018-07-23 A | 2018-07-24 A | 100% |  |  |  |
| 145 | 24.3 | V4防盗链（CDN的失效时间的准确性需要分析-CDN团队） | manual | 1d | 2018-07-23 A | 2018-07-24 A | 100% |  |  |  |
| 147 | 25 | **PS5.3版本需求收集** |  | 25d | 2018-08-20 | 2018-09-21 |  | 顾俊俊(外); 胡奎; 李子花(外) | 600h |  |
| 148 | 25.1 | 码流控制（Auth给出码流值和中文描述） | manual | 5d | 2018-08-20 | 2018-08-24 |  |  |  |  |
| 149 | 25.2 | 点卡现有功能支持-需要增加对跨域的支持 | manual | 1d? | 2018-08-20 | 2018-08-21 |  |  |  |  |
| 150 | 25.3 | DRM方案评估 | manual | 6d | 2018-08-21 | 2018-08-28 |  |  |  |  |
| 151 | 25.4 | DRM开发 | manual | 10d | 2018-09-03 | 2018-09-14 |  |  |  |  |
| 152 | 25.5 | 持续优化 | manual | 1d? | 2018-08-20 | 2018-08-21 |  |  |  |  |
| 153 | 25.6 | 研发联调 | manual | 6d | 2018-09-14 | 2018-09-21 |  |  |  |  |
| 154 | 25.7 | 集成测试 | manual | 1d? | 2018-08-20 | 2018-08-21 |  |  |  |  |
| 156 | 26 | **unicorn二期-1交付** |  | 38d | 2018-08-08 | 2018-09-28 |  | 顾俊俊(外); 黄笑龙(外); 李子花(外) | 912h |  |
| 157 | 26.1 | 融合包订购（WAG同步融合产品给手机侧+接收手机侧的订购同步信息 ） | manual | 6d | 2018-08-21 | 2018-08-28 |  |  |  |  |
| 158 | 26.2 | WAG:产品列表排序+隐藏功能（不集成OrderCode） | manual | 1d? | 2018-08-08 | 2018-08-09 |  |  |  |  |
| 159 | 26.3 | 对营销系统的支持（4个接口,aaa+wag）注意：WAG不集成OrderCore | manual | 1d? | 2018-08-08 | 2018-08-09 |  |  |  |  |
| 160 | 26.4 | 会员体系去广告支持（AAA的Logon接口给出信息，不需集成OrderCore | manual | 1d? | 2018-08-08 | 2018-08-09 |  |  |  |  |
| 161 | 26.5 | 码流自适应功能增强（AAA模块增加码流枚举接口供终端每次登录时调用） | manual | 1d? | 2018-08-08 | 2018-08-09 |  |  |  |  |
| 162 | 26.6 | 研发搭建对接环境进行测试 | manual | 1d | 2018-09-11 | 2018-09-11 |  |  |  |  |
| 163 | 26.7 | QA集成测试 | manual | 1d | 2018-08-08 | 2018-08-09 |  |  |  |  |
| 165 | 27 | **unicorn二期-2交付** |  | 24d | 2018-10-10 | 2018-11-12 |  |  |  |  |
| 166 | 27.1 | 会员体系去广告支持（AAA的Logon接口给出信息，需要集成OrderCore（会员功能） | manual | 1d? | 2018-10-10 | 2018-10-11 |  |  |  |  |
| 167 | 27.2 | 会员体系去广告支持（WAG订购会员产品后，将会员信息返回给终端，仍然不集成OrderCore） | manual | 1d? | 2018-10-10 | 2018-10-11 |  |  |  |  |
| 168 | 27.3 | 融合包订购对接会员体系 | manual | 1d? | 2018-10-10 | 2018-10-11 |  |  |  |  |
| 169 | 27.4 | 对营销系统的支持（WAG提供的支付二维码和支付状态接口仍然不集成OrderCore） | manual | 1d? | 2018-10-10 | 2018-10-11 |  |  |  |  |
| 170 | 27.5 | 营销平台+AAA+WAG三方联调 | manual | 4d | 2018-10-30 | 2018-11-02 |  |  |  |  |
| 171 | 27.6 | 集成测试 | manual | 6d | 2018-10-10 | 2018-10-18 |  |  |  |  |

Notes:
- 157: 该功能可以直接交付商用，（配置文件直接配置约定好的融合包Code）
- 159: 1、AAA提供扫描登陆接口和登陆状态查询接口 / 2、WAG提供的支付二维码和支付状态接口（目前不集成OrderCore，仍是直接写订购记录） / 说明：上面2个接口不商用，仅供终端及外围组件开发对接使用
- 160: AAA的Logon接口给出信息，直接给出静态去广告信息，不需集成OrderCore，供终端测试流程使用 / 该功能不具备商用条件，仅供其他组件对接测试使用
- 166: AAA的Logon接口给出信息，需要集成OrderCore（会员功能）
- 169: WAG提供的支付二维码和支付状态接口需要集成OrderCore（包含会员及营销ＡＰＩ的）完成订单...

| ID | WBS | Task | Type | Duration | Start | Finish | Complete | Remaining | Resources | Work | Actual work |
| --- | --- | --- | --- | --- | --- | --- | --- | --- | --- | --- | --- |
| 173 | 28 | **unicorn三期需求收集** |  | 15d | 2018-10-29 | 2018-11-19 |  |  | 夏迎杰; 黄笑龙(外) | 240h |  |
| 174 | 28.1 | WAG流改版(注意游客特殊处理)+营销策略支持 | manual | 1d? | 2018-10-29 | 2018-10-30 |  |  |  |  |  |
| 175 | 28.2 | 会员中心（个人中心）改版,AAA仅提供接口即可，终端来实现 | inactive, manual | 1d? | 2018-10-29 | 2018-10-30 |  |  |  |  |  |
| 176 | 28.3 | WAG：康佳用户订购信息同步给百视通，需要考虑是否定制化同步接口 | manual | 1d? | 2018-10-29 | 2018-10-30 |  |  |  |  |  |
| 182 | 29 | **陕西移动-中兴对接数据专项整治** |  | 6d | 2018-08-07 A | 2018-08-14 A | 100% |  | 夏迎杰 | 48h | 48h |
| 183 | 29.1 | 中兴开会数据的全量比对 | manual | 1d | 2018-08-07 A | 2018-08-08 A | 100% |  |  |  |  |
| 184 | 29.2 | 中兴订购数据失效时间错误的清洗 | manual | 1d | 2018-08-07 A | 2018-08-08 A | 100% |  |  |  |  |
| 185 | 29.3 | 中兴订购数据总量和百视通数据总量的全量比对 | manual | 1d | 2018-08-07 A | 2018-08-08 A | 100% |  |  |  |  |
| 186 | 29.4 | 上线反馈跟进 | manual | 1d | 2018-08-07 A | 2018-08-08 A | 100% |  |  |  |  |
| 188 | 30 | **青海联通增值** |  | 10d | 2018-08-08 A | 2018-08-21 | 75% | 2.5d | 王明冬; 丁翠 | 160h | 12h |
| 189 | 30.1 | AAA版本服务化改造 | manual | 1d? | 2018-08-08 A | 2018-08-09 | 75% | 0.25d? |  |  |  |
| 190 | 30.2 | Preboss改造 | manual | 1d? | 2018-08-08 A | 2018-08-09 | 75% | 0.25d? |  |  |  |
| 191 | 30.3 | 数据迁移 | manual | 1d? | 2018-08-08 A | 2018-08-09 | 75% | 0.25d? |  |  |  |
| 193 | 31 | **山东移动增值-支付宝支付--暂停(支付回调接口描述文档及样例缺失)** | inactive | 26d | 2018-08-10 | 2018-09-14 |  |  | 魏大高; 袁正印 | 416h |  |
| 194 | 31.1 | WAG增加对支付宝支付的支持 | inactive, manual | 1d? | 2018-08-10 | 2018-08-13 |  |  |  |  |  |
| 195 | 31.2 | 营销数据的统计问题 | inactive, manual | 1d? | 2018-08-10 | 2018-08-13 |  |  |  |  |  |
| 196 | 31.3 | 集成测试 | inactive, manual | 11d | 2018-08-31 | 2018-09-14 |  |  |  |  |  |
| 199 | 32 | **TMS版本迭代** |  | 30d | 2018-07-23 A | 2018-08-31 A | 100% |  | 邵磊(外); 丁翠; 顾俊俊(外) | 720h | 720h |
| 200 | 32.1 | 需求数量及优先级制定 | manual | 7d | 2018-07-23 A | 2018-07-31 A | 100% |  |  |  |  |
| 201 | 32.2 | 代码开发 | manual | 1d | 2018-07-23 A | 2018-07-24 A | 100% |  |  |  |  |
| 202 | 32.3 | 研发自测 | manual | 1d | 2018-07-23 A | 2018-07-24 A | 100% |  |  |  |  |
| 204 | 33 | **贵州服务化版本改造** |  | 12d | 2018-08-30 A | 2018-09-14 | 88% | 1.5d | 丁翠; 王明冬 | 192h | 12h |
| 205 | 33.1 | AAA,PS | manual | 1d | 2018-08-30 A | 2018-08-31 A | 100% |  |  |  |  |
| 206 | 33.2 | WAG直接用当前版本 | manual | 1d | 2018-08-30 A | 2018-08-31 A | 100% |  |  |  |  |
| 207 | 33.3 | 集成测试 | manual | 1d? | 2018-08-30 A | 2018-08-31 | 75% | 0.25d? |  |  |  |

Notes:
- 193: 暂停

| ID | WBS | Task | Type | Duration | Start | Finish | Total slack | Resources | Work |
| --- | --- | --- | --- | --- | --- | --- | --- | --- | --- |
| 210 | 34 | **辽宁移动辅牌照增值专区（银河，芒果）-基于5.4** |  | 30d | 2018-09-28 | 2018-11-08 |  | 魏大高; 杨澄; 袁正印; 张秋月 | 960h |
| 211 | 34.1 | 终端辅牌照APK的开发 | manual | 2d | 2018-09-28 | 2018-10-02 |  |  |  |
| 212 | 34.2 | WAG 主副牌照产品过滤 | manual | 3d | 2018-09-28 | 2018-10-03 |  |  |  |
| 213 | 34.3 | AAA开户主副牌照区分 | manual | 2d | 2018-09-28 | 2018-10-02 |  |  |  |
| 214 | 34.4 | Preboss C3接口修正+开发(对接用户数据，不包含增值数据)--不做 | manual | 1d | 2018-09-28 | 2018-10-01 |  |  |  |
| 215 | 34.5 | 研发自测(主副牌照，webservice及c3采用mock方式) | manual | 2d | 2018-09-28 | 2018-10-02 |  |  |  |
| 216 | 34.6 | 需求变更：WAG现网->直接展现二维码，不需要用户使用遥控器操作后获取 | manual | 1d? | 2018-09-28 | 2018-10-01 |  |  |  |
| 217 | 34.7 | 集成测试(AAA，wag主副牌照，多种订购方式及preboss十几个接口) | manual | 8d | 2018-10-10 | 2018-10-19 |  |  |  |
| 218 | 34.8 | <新任务> | manual | 10d | 2018-10-26 | 2018-11-08 |  |  |  |
| 220 | 35 | **辽宁移动主牌照-基于7.0的问题修复** |  | 3d | 2018-10-10 | 2018-10-12 |  | 张秋月 | 24h |
| 221 | 35.1 | 测试直播地址写死的问题 | manual | 1d | 2018-10-10 | 2018-10-11 |  |  |  |
| 222 | 35.2 | 智能频道收付费 | manual | 1d | 2018-10-10 | 2018-10-11 |  |  |  |
| 224 | 36 | **安徽移动支持咪咕多屏-5.4** |  | 4d | 2018-10-23 | 2018-10-26 |  | 张超(外); 张秋月; 黄笑龙(外) | 96h |
| 225 | 36.1 | 终端新版本传递子账号及省份写死的问题 | manual | 1d? | 2018-10-23 | 2018-10-24 |  |  |  |
| 226 | 36.2 | 多屏测试 | manual | 1d? | 2018-10-23 | 2018-10-24 |  |  |  |
| 227 | 36.3 | 基线5.4功能回归测试 | manual | 1d? | 2018-10-23 | 2018-10-24 |  |  |  |
| 228 | 36.4 | 模块部署 | manual | 1d? | 2018-10-23 | 2018-10-24 |  |  |  |
| 229 | 36.5 | 测试 | manual | 1d? | 2018-10-23 | 2018-10-24 |  |  |  |
| 232 | 37 | **安徽移动银河用户迁转百视通(已激活用户)** |  | 1d? | 2018-01-01 | 2018-01-02 | 0d | 韩耀强; 袁正印 | 16h |
| 233 | 37.1 | 迁移方案书写 | manual | 1d? | 2018-01-01 | 2018-01-02 |  |  |  |
| 234 | 37.2 | 研发需要出脚本及辅助类 | manual | 1d? | 2018-01-01 | 2018-01-02 |  |  |  |
| 235 | 37.3 | 测试 | manual | 1d? | 2018-01-01 | 2018-01-02 |  |  |  |
| 238 | 38 | **歌华有线平台不能提升支持5.4版本（服务化版本）** |  | 1d? | 2018-01-01 | 2018-01-02 | 0d |  |  |
| 239 | 38.1 | 北京开发？ | manual | 1d? | 2018-01-01 | 2018-01-02 |  |  |  |

| ID | WBS | Task | Type | Duration | Start | Finish | Complete | Remaining | Resources | Work |
| --- | --- | --- | --- | --- | --- | --- | --- | --- | --- | --- |
| 241 | 39 | **咪视通3.0** |  | 74d | 2018-09-19 A | 2018-12-31 | 25% | 55.85d | 胡奎; 夏迎杰; 杨传波 | 1776h |
| 242 | 39.1 | 方案讨论 | manual | 1d | 2018-09-19 | 2018-09-19 |  |  |  |  |
| 243 | 39.2 | 接口制定初稿：认证，鉴权，订购等 | manual | 2d | 2018-09-24 | 2018-09-25 |  |  |  |  |
| 244 | 39.3 | 遗留问题：消费记录中的券信息？ | manual | 1d? | 2018-09-19 | 2018-09-20 |  |  |  |  |
| 245 | 39.4 | 遗留问题：订购流畅图中：产品收银台服务中产品如何来获取需要明确？ | manual | 1d? | 2018-09-19 | 2018-09-20 |  |  |  |  |
| 246 | 39.5 | 遗留问题：SN重复的问题：多个盒子SN重复的现象 | manual | 1d? | 2018-09-19 | 2018-09-20 |  |  |  |  |
| 247 | 39.6 | 遗留问题：终端携带省份ID和地市Code的准确性需要APK保证 | manual | 1d? | 2018-09-19 | 2018-09-20 |  |  |  |  |
| 248 | 39.7 | <新任务> | manual | 1d? | 2018-09-19 | 2018-09-20 |  |  |  |  |
| 249 | 39.8 | 其他遗留问题… | manual | 1d? | 2018-09-19 | 2018-09-20 |  |  |  |  |
| 250 | 39.9 | AAA模块：认证Logon接口 | manual | 1d | 2018-09-27 | 2018-09-27 |  |  |  |  |
| 251 | 39.10 | AAA模块：基地模式的logon接口功能 | manual | 1d | 2018-09-19 A | 2018-09-20 A | 100% |  |  |  |
| 252 | 39.11 | AAA模块：分省模式Logon功能（渠道规则扩展，及**分组的关联逻辑） | manual | 1d? | 2018-09-19 | 2018-09-20 |  |  |  |  |
| 253 | 39.12 | WAG模块：短信验证接口 | manual | 1d | 2018-09-27 A | 2018-09-27 A | 100% |  |  |  |
| 254 | 39.13 | WAG模块：验证计费标识接口（可选） | manual | 1d | 2018-09-28 | 2018-09-28 |  |  |  |  |
| 255 | 39.14 | WAG模块：支付下单接口 | manual | 2d | 2018-09-29 A | 2018-09-30 A | 100% |  |  |  |
| 256 | 39.15 | WAG模块：支付下单-百视通订购记录的生产机制待定 | manual | 1d? | 2018-09-19 | 2018-09-20 |  |  |  |  |
| 257 | 39.16 | WAG模块：订购接口 | manual | 2d | 2018-10-08 A | 2018-10-09 A | 100% |  |  |  |
| 258 | 39.17 | WAG模块：订购百视通功能实现 | manual | 1d? | 2018-09-19 | 2018-09-20 |  |  |  |  |
| 259 | 39.18 | WAG模块：订购信息同步接口 | manual | 3d | 2018-10-10 A | 2018-10-12 A | 100% |  |  |  |
| 260 | 39.19 | WAG模块：订购信息同步百视通内部功能实现 | manual | 1d? | 2018-09-19 | 2018-09-20 |  |  |  |  |
| 261 | 39.20 | WAG模块：支付回调接口 | manual | 2d | 2018-10-15 A | 2018-10-16 A | 100% |  |  |  |
| 262 | 39.21 | WAG模块：支付回调百视通内部功能实现 | manual | 1d? | 2018-09-19 | 2018-09-20 |  |  |  |  |
| 263 | 39.22 | WAG模块：支付状态查询功能 | manual | 2d | 2018-10-17 | 2018-10-18 |  |  |  |  |
| 264 | 39.23 | WAG模块：退订接口 | manual | 1d | 2018-10-19 A | 2018-10-19 A | 100% |  |  |  |
| 265 | 39.24 | WAG模块：退订接口百视通内部功能实现 | manual | 1d? | 2018-09-19 | 2018-09-20 |  |  |  |  |
| 266 | 39.25 | WAG模块：获取消费记录接口 | manual | 1d | 2018-10-22 A | 2018-10-22 A | 100% |  |  |  |
| 267 | 39.26 | PS模块：百视通鉴权接口 | manual | 2d | 2018-10-08 | 2018-10-09 |  |  |  |  |
| 268 | 39.27 | PS模块：实现SCSP鉴权功能（微调） | manual | 1d | 2018-10-10 | 2018-10-10 |  |  |  |  |
| 269 | 39.28 | PS：新增播放流程（CP引入的节目和移动自有节目） | manual | 3d | 2018-10-11 | 2018-10-15 |  |  |  |  |
| 271 | 39.29 | 关键节点1：咪视通3.0APK+百视通AAA进行认证流程对接(基地模式的对接) | manual | 3d | 2018-10-08 | 2018-10-10 |  |  |  |  |
| 272 | 39.30 | 关键节点2：点播+直播节目鉴权,不用给出播放地址，仅给出AuthCode | manual | 3d | 2018-10-15 | 2018-10-17 |  |  |  |  |
| 274 | 39.31 | 关键节点3：订购支付流程对接 | manual | 3d | 2018-10-23 | 2018-10-25 |  |  |  |  |
| 275 | 39.32 | 阶段性集成测试... | manual | 1d? | 2018-09-19 | 2018-09-20 |  |  |  |  |
| 276 | 39.33 | 关键节点4：咪视通3.0APK+百视通AAA进行认证流程对接(分省模式的对接) | manual | 1d? | 2018-09-19 | 2018-09-20 |  |  |  |  |

| ID | WBS | Task | Type | Duration | Start | Finish | Complete | Remaining | Total slack | Resources | Work |
| --- | --- | --- | --- | --- | --- | --- | --- | --- | --- | --- | --- |
| 280 | 40 | **贵州电信多彩增加反向订购流程(小需求)** |  | 20d | 2018-09-17 | 2018-10-12 |  |  |  | 丁翠; 魏大高 | 320h |
| 281 | 40.1 | 代码开发 | manual | 1d? | 2018-09-17 | 2018-09-18 |  |  |  |  |  |
| 282 | 40.2 | 集成测试 | manual | 5d | 2018-10-08 | 2018-10-12 |  |  |  |  |  |
| 284 | 41 | **陕西移动-基于7.0问题修复** |  | 1d? | 2018-01-01 | 2018-01-02 |  |  | 0d | 张秋月 | 8h |
| 285 | 41.1 | 跳转问题 | manual | 1d? | 2018-01-01 | 2018-01-02 |  |  |  |  |  |
| 288 | 42 | **北京移动增值（基地模式上调整支持）** |  | 29d | 2018-10-09 A | 2018-11-16 | 8% | 26.58d |  | 刘佳丽(外); 龚晓琴(外); 徐斌 | 824h |
| 289 | 42.1 | 讨论和制定和终端侧新增加的接口及接口定义 | manual | 1d | 2018-10-11 | 2018-10-12 |  |  |  | 刘佳丽(外); 徐斌 | 16h |
| 290 | 42.2 | 前置条件：易视腾提供支付SDK(尽早给出，需要在12号左右给出相对稳定的版本供研发集成开发） | manual | 1d? | 2018-10-09 | 2018-10-10 |  |  |  |  |  |
| 291 | 42.3 | 终端APK：获取北京账号的定制化逻辑（点击订购节目时可以触发相应流程） | manual | 1d? | 2018-10-09 | 2018-10-10 |  |  |  |  |  |
| 292 | 42.4 | 终端APK：获取到北京本省的增值产品时，需要调相应SDK完成支付及支付信息回写给WAG | manual | 1d? | 2018-10-09 | 2018-10-10 |  |  |  |  |  |
| 293 | 42.5 | 终端APK：获取到北京账号时，调用AAA的更新用户接口以便AAA补充UserAccount | manual | 1d? | 2018-10-09 | 2018-10-10 |  |  |  |  |  |
| 294 | 42.6 | 终端APK：本身定制化流程开发 | manual | 1d? | 2018-10-09 | 2018-10-10 |  |  |  |  |  |
| 295 | 42.7 | AAA模块：新定义开发更新用户UserAccount的接口 | manual | 2d | 2018-10-12 A | 2018-10-16 A | 100% |  |  |  |  |
| 296 | 42.8 | AAA模块：Open/login接口在处理UserAccount的校验及持久化流程需要调整（注意如何区分是北京本省用户才做这样的定制化流程） | manual | 2d | 2018-10-16 A | 2018-10-18 A | 100% |  |  |  |  |
| 297 | 42.9 | PS模块：按照节目是否收费来鉴权，成功和待订购的情况都要返回播放地址，并且产品列表中扩展产品归属属性（是北京本省产品还是咪咕侧产品：本期可以不做该信息扩展） | manual | 2d | 2018-10-18 | 2018-10-22 |  |  |  |  |  |
| 298 | 42.10 | WAG模块：Review北京本省收费流程是否能满足 | manual | 2d | 2018-10-22 | 2018-10-24 |  |  |  |  |  |
| 299 | 42.11 | 增加重庆移动的增值改造工作 | manual | 1d? | 2018-10-09 | 2018-10-10 |  |  |  |  |  |
| 300 | 42.12 | <新任务> | manual | 1d? | 2018-10-09 | 2018-10-10 |  |  |  |  |  |
| 301 | 42.13 | 终端+平台本次功能研发联调测试 | manual | 3d | 2018-10-22 | 2018-10-25 |  |  |  |  |  |
| 302 | 42.14 | 测试用例书写 | manual | 2d | 2018-10-26 | 2018-10-29 |  |  |  |  |  |
| 303 | 42.15 | 集成测试-北京移动新的APK版本+平台新功能测试 | manual | 9d | 2018-10-30 | 2018-11-09 |  |  |  |  |  |
| 304 | 42.16 | 集成测试-回归测试（重点回归：内蒙古增值完整流程+重庆的支付UI流程 | manual | 5d | 2018-11-12 | 2018-11-16 |  |  |  |  |  |
| 305 | 42.17 | 其他：AAA中去掉InterfaceLog的写表操作 | manual | 1d? | 2018-10-09 | 2018-10-10 |  |  |  |  |  |
| 306 | 42.18 | 增加重庆增值改造的测试及回归工作 | manual | 1d? | 2018-10-09 | 2018-10-10 |  |  |  |  |  |
| 307 | 42.19 | 集成测试（北京+重庆新功能测试）+回归测试（内蒙古+移动+山西。。。） | manual | 7d | 2018-11-08 | 2018-11-16 |  |  |  | 龚晓琴(外); 杨传波 | 112h |
| 311 | 42.20 | <新任务> | manual | 1d? | 2018-10-09 | 2018-10-10 |  |  |  |  |  |

| ID | WBS | Task | Type | Duration | Start | Finish | Resources | Work |
| --- | --- | --- | --- | --- | --- | --- | --- | --- |
| 313 | 43 | **重庆移动-VIS营销数据对接（基地模式）-小需求** |  | 5d | 2018-10-10 | 2018-10-16 | 邵磊(外); 杨传波 | 80h |
| 314 | 43.1 | WAG版本开发 | manual | 3d | 2018-10-10 | 2018-10-12 |  |  |
| 315 | 43.2 | WAG版本集成测试 | manual | 2d | 2018-10-15 | 2018-10-16 |  |  |
| 318 | 44 | **辽宁移动-辽宁移动增值业务管理平台项目** |  | 18d | 2018-10-11 | 2018-11-04 | 杨澄; 袁正印; 张秋月; 胡奎 | 576h |
| 319 | 44.1 | 终端APK（主+副）新增和PS之间的接口，区分节目对该用户是收费（平台AAA定制开发），还是免费（终端与华为之间播放鉴权） | manual | 1d? | 2018-10-11 | 2018-10-12 |  |  |
| 320 | 44.2 | 终端APK具备拉起统一支付页面及传动相关参数的能力 | manual | 1d? | 2018-10-11 | 2018-10-12 |  |  |
| 321 | 44.3 | AAA：主副牌照流程需要保留 | manual | 1d? | 2018-10-11 | 2018-10-12 |  |  |
| 322 | 44.4 | AAA鉴权流程定制（该用户该节目免费通知终端，收费增加增值平台鉴权，根据鉴权结果走后续流程） | manual | 1d? | 2018-10-11 | 2018-10-12 |  |  |
| 323 | 44.5 | PS：支付电视剧剧集限免功能（限免的集数之间到华为播放鉴权，收到的集数到增值平台鉴权） | manual | 1d? | 2018-12-25 | 2018-12-26 |  |  |
| 324 | 44.6 | WAG:产品列表展现 | manual | 1d? | 2019-01-15 | 2019-01-16 |  |  |
| 325 | 44.7 | WAG:对可以退订的产品支持退订 | manual | 1d? | 2018-10-11 | 2018-10-12 |  |  |
| 326 | 44.8 | WAG:订购完成后，结果回调接口（百视通提供） | manual | 1d? | 2018-10-11 | 2018-10-12 |  |  |
| 327 | 44.9 | WAG:在线实时查询用户的订购信息 | manual | 1d? | 2018-10-11 | 2018-10-12 |  |  |
| 328 | 44.10 | Preboss:C3订购数据的采集（核对使用） | manual | 1d? | 2018-10-11 | 2018-10-12 |  |  |
| 329 | 44.11 | XXX模块：提供一个类似客气查询某个用户订购信息的功能 | manual | 1d? | 2018-11-04 | 2018-11-04 |  |  |
| 330 | 44.12 | 研发+华为+XXX三方接口联调对接 | manual | 7d | 2018-10-29 | 2018-11-06 |  |  |
| 331 | 44.13 | 集成测试（平台+一款主流终端） | manual | 10d | 2018-11-07 | 2018-11-20 |  |  |
| 332 | 44.14 | 集成测试（终端主牌照APK），适配范围明确2-3款 | manual | 3d | 2018-11-21 | 2018-11-23 |  |  |
| 333 | 44.15 | 集成测试（终端副牌照APK），适配范围明确2-3款 | manual | 3d | 2018-11-26 | 2018-11-28 |  |  |
| 337 | 45 | **山东移动增值-账单支付增加手机验证码流程** |  | 23d | 2018-10-17 | 2018-11-16 | 邵磊(外); 袁正印 | 368h |
| 338 | 45.1 | 数字输入弹出框界面开发 | manual | 1d? | 2018-10-17 | 2018-10-18 |  |  |
| 339 | 45.2 | 产品获取手机短信页面开发 | manual | 1d | 2018-10-17 | 2018-10-18 |  |  |
| 340 | 45.3 | 产品验证码填写页面开发 | manual | 1d | 2018-10-17 | 2018-10-18 |  |  |
| 341 | 45.4 | 营销获取手机短信页面开发 | manual | 1d | 2018-10-17 | 2018-10-18 |  |  |
| 342 | 45.5 | 营销验证码填写页面开发 | manual | 1d | 2018-10-17 | 2018-10-18 |  |  |
| 343 | 45.6 | 页面跳转流程 开发 | manual | 1d | 2018-10-17 | 2018-10-18 |  |  |
| 344 | 45.7 | 短信验证码生成开发 | manual | 1d | 2018-10-17 | 2018-10-18 |  |  |
| 345 | 45.8 | 短信验证码存储和验证开发 | manual | 1d | 2018-10-17 | 2018-10-18 |  |  |
| 346 | 45.9 | 短信发送接口调试 | manual | 1d | 2018-10-17 | 2018-10-18 |  |  |
| 347 | 45.10 | 二维码回调接口开发和mock调试 | manual | 1d | 2018-10-17 | 2018-10-18 |  |  |
| 348 | 45.11 | 集成测试 | manual | 5d | 2018-11-07 | 2018-11-13 |  |  |
| 350 | 45.12 | 第一次送测TAG时间 | manual | 1d? | 2018-10-17 | 2018-10-18 |  |  |
| 351 | 45.13 | 第二次送测TAG时间: | manual | 1d? | 2018-11-15 | 2018-11-16 |  |  |

| ID | WBS | Task | Type | Duration | Start | Finish | Resources | Work |
| --- | --- | --- | --- | --- | --- | --- | --- | --- |
| 353 | 46 | **陕西移动-根据IP分配用户分组** |  | 11d | 2018-10-26 | 2018-11-09 |  | 32h |
| 354 | 46.1 | OSS开发（可单独测试上线） | manual | 1d? | 2018-10-26 | 2018-10-29 |  |  |
| 355 | 46.2 | AAA开发 | manual | 1d | 2018-10-26 | 2018-10-26 | 夏迎杰 | 8h |
| 356 | 46.3 | AAA逻辑自测 | manual | 1d | 2018-10-29 | 2018-10-29 | 夏迎杰 | 8h |
| 357 | 46.4 | AAA的SN统一大写 | manual | 1d? | 2018-10-26 | 2018-10-29 |  |  |
| 358 | 46.5 | 集成测试 | manual | 2d | 2018-11-07 | 2018-11-09 | 袁正印 | 16h |
| 362 | 47 | **重庆移动+北京本地产品的增值改造** |  | 16d | 2018-10-26 | 2018-11-16 | 韩耀强; 龚晓琴(外); 杨传波 | 384h |
| 363 | 47.1 | 前置获取数据及兼容逻辑处理 | manual | 1d | 2018-10-26 | 2018-10-29 |  |  |
| 364 | 47.2 | 产品列表页面展示及订购功能 | manual | 1d | 2018-10-26 | 2018-10-29 |  |  |
| 365 | 47.3 | 监听订购信息并保存订购记录 | manual | 1d | 2018-10-26 | 2018-10-29 |  |  |
| 366 | 47.4 | 获取VAS的URL信息及跳转 | manual | 1d | 2018-10-26 | 2018-10-29 |  |  |
| 367 | 47.5 | 获取鉴权结果及产品说明页展示 | manual | 1d | 2018-10-26 | 2018-10-29 |  |  |
| 368 | 47.6 | 二次确认页展示及订购功能 | manual | 1d | 2018-10-26 | 2018-10-29 |  |  |
| 369 | 47.7 | 终端+wag研发联调测试 | manual | 1d | 2018-11-07 | 2018-11-07 |  |  |
| 370 | 47.8 | 集成测试 | manual | 7d | 2018-11-08 | 2018-11-16 |  |  |
| 375 | 48 | **WAG版本改造** |  | 23d | 2018-11-07 | 2018-12-07 |  | 8h |
| 376 | 48.1 | 框架改造 | manual | 1d? | 2018-11-07 | 2018-11-08 | 魏大高 | 8h |
| 377 | 48.2 | WAG3.0实现 | manual | 1d? | 2018-11-07 | 2018-11-08 |  |  |
| 382 | 49 | **辽宁移动支付流程统一修改** |  | 10d | 2018-11-21 | 2018-12-05 |  | 384h |
| 383 | 49.1 | WAG页面开发 | manual | 3d | 2018-11-21 | 2018-11-23 | 邵磊(外) | 24h |
| 384 | 49.2 | 数据表变动，图片获取显示，原始价格的维护 | manual | 3d | 2018-11-26 | 2018-11-28 | 邵磊(外) | 24h |
| 385 | 49.3 | 集成测试：主牌照 | manual | 2d | 2018-11-29 | 2018-11-30 | 袁正印 | 16h |
| 386 | 49.4 | 集成测试：副牌照 | manual | 2d | 2018-12-03 | 2018-12-04 | 袁正印 | 16h |
| 387 | 49.5 | 第一次送测预计时间 | manual | 1d? | 2018-12-03 | 2018-12-04 |  |  |

| ID | WBS | Task | Type | Duration | Start | Finish | Total slack | Resources | Work |
| --- | --- | --- | --- | --- | --- | --- | --- | --- | --- |
| 393 | 49.6 | **安徽移动增加微信支付及现有流程改造** |  | 18d | 2018-11-28 | 2018-12-21 |  | 韩耀强; 袁正印 | 288h |
| 394 | 49.6.1 | 增加微信支付流程 |  | 1d | 2018-11-28 | 2018-11-29 | 56.88d |  |  |
| 395 | 49.6.2 | 账单支付流程调整（二次确认） | manual | 1d? | 2018-11-28 | 2018-11-29 |  |  |  |
| 396 | 49.6.3 | NBA+英超要支持短时包 | manual | 1d? | 2018-11-28 | 2018-11-29 |  |  |  |
| 398 | 49.7 | **蒲公英-** |  | 6d | 2018-11-30 | 2018-12-07 |  |  | 16h |
| 399 | 49.7.1 | WAG：登录页面和配置中心页面定制化（蒲公英用用户分组进行定制化） | manual | 1d? | 2018-12-04 | 2018-12-05 |  | 黄笑龙(外) | 8h |
| 400 | 49.7.2 | 集成测试 | manual | 1d? | 2018-11-30 | 2018-12-03 |  | 李子花(外) | 8h |
| 402 | 50 | **江苏移动试看** |  | 1d? | 2018-12-20 | 2018-12-21 | 0d |  |  |
| 403 | 50.1 | PS调整 | manual | 1d? | 2018-12-20 | 2018-12-21 |  |  |  |
| 404 | 50.2 | WAG调整 | manual | 1d? | 2018-12-20 | 2018-12-21 |  |  |  |
| 405 | 50.3 | 集成测试 | manual | 1d? | 2018-12-20 | 2018-12-20 |  |  |  |
| 408 | 51 | **内蒙古移动-弹窗订购功能** |  | 1d? | 2018-01-01 | 2018-01-02 | 0d |  |  |
| 409 | 51.1 | WAG调整 | manual | 1d? | 2018-01-01 | 2018-01-02 |  |  |  |
| 410 | 51.2 | 银杏树调整 | manual | 1d? | 2018-01-01 | 2018-01-02 |  |  |  |
| 411 | 51.3 | 集成测试 | manual | 1d? | 2018-01-01 | 2018-01-02 |  |  |  |
| 413 | 52 | **北京移动-统一搜索** |  | 1d? | 2018-12-31 | 2019-01-01 | 0d |  |  |
| 414 | 52.1 | 直播节目的同步 | manual | 1d? | 2018-12-31 | 2019-01-01 |  |  |  |
| 415 | 52.2 | 终端APK的适配 | manual | 1d? | 2018-12-31 | 2019-01-01 |  |  |  |
| 416 | 52.3 | 集成测试 | manual | 1d? | 2018-12-31 | 2018-12-31 |  |  |  |
| 419 | 53 | **陕西移动-增值业务管理平台对接** |  | 24.88d? | 2018-12-24 | 2019-01-25 | 0d |  | 336h |
| 420 | 53.1 | 终端主牌照APK | manual | 6d | 2019-01-02 | 2019-01-09 |  | 杨澄 | 48h |
| 421 | 53.2 | 终端副牌照APK | manual | 1d? | 2018-12-24 | 2018-12-25 |  | 杨澄 | 8h |
| 422 | 53.3 | AAA组件开发+联调 | manual | 1d? | 2018-12-24 | 2018-12-25 |  |  |  |
| 423 | 53.4 | PS组件开发+联调 | manual | 3d | 2019-01-02 | 2019-01-04 |  | 胡奎 | 24h |
| 424 | 53.5 | WAG组件开发+联调 | manual | 6d | 2019-01-02 | 2019-01-09 |  | 韩耀强 | 48h |
| 425 | 53.6 | PreBoss组件开发+联调 | manual | 2d | 2018-12-24 | 2018-12-25 |  | 夏迎杰 | 16h |

| ID | WBS | Task | Type | Duration | Start | Finish | Resources | Work |
| --- | --- | --- | --- | --- | --- | --- | --- | --- |
| 426 | 53.7 | **集成测试** |  | 12d | 2019-01-10 | 2019-01-25 | 袁正印; 张秋月 | 192h |
| 427 | 53.7.1 | 终端版本（主+副：5.1；5.4；5.6各3各版本） | manual | 1d? | 2019-01-10 | 2019-01-11 |  |  |
| 428 | 53.7.2 | 平台AAA+PS+WAG+PreBoss | manual | 1d? | 2019-01-10 | 2019-01-11 |  |  |
| 431 | 54 | **青海联通增值-** |  | 13d | 2018-12-25 | 2019-01-11 |  | 240h |
| 432 | 54.1 | 终端调测 | manual | 4d | 2018-12-27 | 2019-01-01 | 张超(外) | 32h |
| 433 | 54.2 | AAA代码调测 | manual | 6d | 2018-12-25 | 2019-01-01 | 黄笑龙(外) | 48h |
| 434 | 54.3 | WAG代码调测 | manual | 4d | 2018-12-27 | 2019-01-01 | 黄笑龙(外) | 32h |
| 435 | 54.4 | PS代码开发 | manual | 6d | 2018-12-25 | 2019-01-01 | 胡奎 | 48h |
| 436 | 54.5 | PreBoss代码调测 | manual | 4d | 2018-12-28 | 2019-01-02 | 黄笑龙(外) | 32h |
| 437 | 54.6 | 集成测试 | manual | 6d | 2019-01-02 | 2019-01-09 | 李晨嘉(外) | 48h |
| 440 | 55 | **安徽移动-大站包增加CP自鉴权备用机制** |  | 10d | 2018-12-29 | 2019-01-10 | 顾俊俊(外); 魏大高 | 160h |
| 441 | 55.1 | 技术方案细化 | manual | 1d? | 2018-12-29 | 2018-12-31 |  |  |
| 442 | 55.2 | AAA版本开发 | manual | 3d | 2019-01-02 | 2019-01-04 |  |  |
| 443 | 55.3 | XXX模块开发 | manual | 1d? | 2018-12-29 | 2018-12-31 |  |  |
| 444 | 55.4 | 集成测试 | manual | 4d | 2019-01-07 | 2019-01-10 |  |  |
